# EDT Hipocrates

How a schedule from MS Project changed from version to version. A marks actual dates.

## Version 1 (saved 2016-09-12)

Note of the change: Plan de proyecto

| ID | WBS | Task | Duration | Start | Finish | Predecessors | Complete | Total float |
| --- | --- | --- | --- | --- | --- | --- | --- | --- |
| 1 | 1 | **Centro médico "Hipócrates"** | 52d | 2016-08-29 A | 2016-11-14 |  | 9% | 0d |
| 2 | 1.1 | **Análisis y Planificación** | 11d | 2016-08-29 A | 2016-09-12 |  | 93% | 0d |
| 3 |  | Toma de requerimientos | 2d | 2016-08-29 A | 2016-08-30 A |  | 100% |  |
| 4 |  | Establecer alcance | 3d | 2016-08-31 A | 2016-09-02 A | 3 | 100% |  |
| 5 |  | Generar ERS | 3d | 2016-09-05 A | 2016-09-07 A | 4 | 100% |  |
| 6 |  | Modelado de procesos | 3d | 2016-09-08 A | 2016-09-12 | 5 | 75% | -1d |
| 7 | 1.2 | **Diseño de procesos** | 5d | 2016-09-13 | 2016-09-20 | 2 |  | -1d |
| 8 | 1.2.1 | **Diseño modelo lógico** | 4d | 2016-09-13 | 2016-09-16 |  |  | -1d |
| 9 |  | Analizar procesos actuales | 2d | 2016-09-13 | 2016-09-14 |  |  | -1d |
| 10 |  | Determinar procesos necesarios para el software | 2d | 2016-09-15 | 2016-09-16 | 9 |  | -1d |
| 11 |  | Diseñar modelo físico | 1d | 2016-09-20 | 2016-09-20 | 8 |  | -1d |
| 12 | 1.3 | **Estructuración** | 2d | 2016-09-21 | 2016-09-22 | 7 |  | 34d |
| 13 |  | Recopilación de los datos existentes del centro médico | 2d | 2016-09-21 | 2016-09-22 |  |  | 34d |
| 14 |  | Limpieza de datos no-reutilizables de la clínica | 2d | 2016-09-21 | 2016-09-22 |  |  | 34d |
| 15 | 1.4 | **Adquisiciones** | 2d | 2016-09-21 | 2016-09-22 | 7 |  | -1d |
| 16 |  | Adquisición de recursos tecnológicos | 1d | 2016-09-21 | 2016-09-21 |  |  | -1d |
| 17 |  | Adquisición de recursos físicos | 1d | 2016-09-21 | 2016-09-21 |  |  | 34d |
| 18 |  | Instalación de recursos físicos | 1d | 2016-09-22 | 2016-09-22 | 17 |  | 34d |
| 19 | 1.5 | **Construcción** | 16d | 2016-09-21 | 2016-10-13 | 16 |  | 0d |
| 20 |  | Fin iteración 1 | 0d | 2016-09-21 | 2016-09-21 |  |  |  |
| 21 | 1.5.2 | **Desarrollo de aplicaciones** | 12d | 2016-09-22 | 2016-10-07 |  |  | 0d |
| 22 |  | Desarrollo módulo ingreso de pacientes | 2d | 2016-09-22 | 2016-09-23 |  |  | 2d |
| 23 |  | Desarrollo módulo agendamiento de horas | 5d | 2016-09-26 | 2016-09-30 | 22 |  | 2d |
| 24 |  | Desarrollo módulo agenda personal | 3d | 2016-10-03 | 2016-10-05 | 23 |  | 2d |
| 25 |  | Desarrollo módulo registro de paciente | 2d | 2016-09-22 | 2016-09-23 |  |  | 0d |
| 26 |  | Desarrollo módulo ficha médica | 3d | 2016-09-26 | 2016-09-28 | 25 |  | 0d |
| 27 |  | Desarrollo módulo post atención | 2d | 2016-09-29 | 2016-09-30 | 26 |  | 0d |
| 28 |  | Desarrollo módulo consultas especialistas | 2d | 2016-10-03 | 2016-10-04 | 27 |  | 0d |
| 29 |  | Desarrollo módulo mantenedores | 3d | 2016-10-05 | 2016-10-07 | 28 |  | 0d |
| 30 |  | Desarrollo módulo de cajas | 3d | 2016-09-22 | 2016-09-26 |  |  | 1d |
| 31 |  | Desarrollo módulo de anulaciones | 3d | 2016-09-27 | 2016-09-29 | 30 |  | 1d |
| 32 |  | Desarrollo módulo pago de honorarios | 3d | 2016-09-30 | 2016-10-04 | 31 |  | 1d |
| 33 |  | Desarrollo módulo reporte de ingreso | 2d | 2016-10-05 | 2016-10-06 | 32 |  | 1d |
| 34 |  | Programación de base de datos | 12d | 2016-09-22 | 2016-10-07 |  |  | 0d |
| 35 |  | Integración de aplicaciones | 3d | 2016-10-11 | 2016-10-13 | 21, 34 |  | 0d |
| 36 |  | Generación de documentación y planes de prueba | 15d | 2016-09-22 | 2016-10-13 |  |  | 0d |
| 37 | 1.6 | **Testing** | 8d | 2016-10-21 | 2016-11-03 | 19FS+5d |  | 0d |
| 38 |  | Caja negra | 3d | 2016-10-21 | 2016-10-25 |  |  | 0d |
| 39 |  | Caja blanca | 2d | 2016-10-21 | 2016-10-24 |  |  | 1d |
| 40 |  | Corrección de errores | 5d | 2016-10-26 | 2016-11-03 | 38, 39 |  | 0d |
| 41 |  | Fin iteración 2 | 0d | 2016-10-24 | 2016-10-24 |  |  |  |
| 42 | 1.7 | **Migración** | 3d | 2016-11-04 | 2016-11-08 | 37 |  | 0d |
| 43 | 1.7.1 | **Carga de información** | 3d | 2016-11-04 | 2016-11-08 |  |  | 0d |
| 44 |  | Registrar datos análogos | 3d | 2016-11-04 | 2016-11-08 |  |  | 0d |
| 45 |  | Registro de pacientes nuevos | 2d | 2016-11-04 | 2016-11-07 |  |  | 1d |
| 46 | 1.8 | **Implementación** | 3d | 2016-11-09 | 2016-11-11 | 42 |  | 0d |
| 47 |  | Implementación de sistema en toda la empresa | 1d | 2016-11-09 | 2016-11-09 |  |  | 2d |
| 48 |  | Capacitación del personal | 1d | 2016-11-09 | 2016-11-09 |  |  | 2d |
| 49 |  | Marcha blanca | 3d | 2016-11-09 | 2016-11-11 |  |  | 0d |
| 50 | 1.9 | **Cierre** | 1d | 2016-11-14 | 2016-11-14 | 46 |  | 0d |
| 51 |  | Entrega de documentación | 1d | 2016-11-14 | 2016-11-14 |  |  | 0d |
| 52 |  | Generar acta de cierre | 1d | 2016-11-14 | 2016-11-14 |  |  | 0d |
| 53 |  | Fin iteración 3 | 0d | 2016-11-14 | 2016-11-14 |  |  |  |

## Version 2 (saved 2016-09-13)

Note of the change: Corregido cronograma y EDT

Last finish 2016-11-14 → 2016-11-24 (+10d).

Added:

| ID | Task | Duration | Start | Finish | Predecessors | Resources |
| --- | --- | --- | --- | --- | --- | --- |
| 2 | **Introducción** | 7d | 2016-08-31 A | 2016-09-08 A |  |  |
| 6 | **Organización** | 5d | 2016-09-08 A | 2016-09-14 | 2 |  |
| 8 | Estructura organizacional | 1d | 2016-09-09 | 2016-09-09 |  | Gonzalo López |
| 9 | Establecer responsables | 1d | 2016-09-09 | 2016-09-09 |  | Tomás Muñiz |
| 10 | Interfaces e interacciones | 1d | 2016-09-12 | 2016-09-12 | 9 | Tomás Muñiz |
| 11 | **Gestión** | 4d | 2016-09-15 A | 2016-09-21 | 1 |  |
| 12 | Objetivos y prioridades | 2d | 2016-09-15 A | 2016-09-16 |  | Gonzalo López |
| 13 | Condiciones asumidas, dependencias y restricciones | 1d | 2016-09-15 | 2016-09-15 |  |  |
| 14 | Gestión de riesgos | 2d | 2016-09-15 | 2016-09-16 |  | Fabián Jaque |
| 15 | Mecanismo de control y ajuste | 4d | 2016-09-15 | 2016-09-21 |  | Pablo de la Sotta |
| 16 | Recursos | 1d | 2016-09-20 | 2016-09-20 | 14 | Fabián Jaque |
| 17 | **Recursos Humanos** | 2d | 2016-09-22 A | 2016-09-23 | 11 |  |
| 18 | Dependencias | 1d | 2016-09-22 | 2016-09-22 |  | Tomás Muñiz |
| 19 | Distribución de RRHH | 1d | 2016-09-22 | 2016-09-22 |  | Fabián Jaque |
| 20 | Cronograma | 2d | 2016-09-22 A | 2016-09-23 |  | Fabián Jaque; Elías Baeza |
| 23 | ECU | 5d | 2016-09-26 | 2016-09-30 |  |  |
| 24 | Documentación técnica | 5d | 2016-09-26 | 2016-09-30 |  |  |
| 25 | Bocetos (Mockups) | 3d | 2016-09-26 | 2016-09-28 |  |  |
| 26 | Modelo de clases | 3d | 2016-09-26 | 2016-09-28 |  |  |
| 56 | Aceptación | 1d | 2016-11-14 | 2016-11-14 | 54, 55 |  |

Removed: 1 Centro médico "Hipócrates"; 8 Diseño modelo lógico; 9 Analizar procesos actuales; 10 Determinar procesos necesarios para el software

Changed:

| ID | Task | Start | Finish | Duration | Complete | Total float | Predecessors | Other |
| --- | --- | --- | --- | --- | --- | --- | --- | --- |
| 1 | **Análisis y Planificación** | 2016-08-29 A → 2016-08-31 A (+2d) | 2016-09-12 → 2016-09-14 (+2d) |  | 93% → 75% |  |  | baseline start none → 2016-08-31; baseline finish none → 2016-09-14 |
| 3 | Toma de requerimientos | 2016-08-29 A → 2016-08-31 A (+2d) | 2016-08-30 A → 2016-09-06 A (+7d) | 2d → 5d |  |  |  | resources none → Elías Baeza; baseline start none → 2016-08-31; baseline finish none → 2016-09-06 |
| 4 | Establecer alcance |  | 2016-09-02 A → 2016-09-06 A (+4d) | 3d → 5d |  |  | 3 → none | resources none → Gonzalo López; Fabián Jaque; baseline start none → 2016-08-31; baseline finish none → 2016-09-06 |
| 5 | Generar ERS |  | 2016-09-07 A → 2016-09-08 A (+1d) | 3d → 4d |  |  |  | resources none → Pablo de la Sotta; Tomás Muñiz; baseline start none → 2016-09-05; baseline finish none → 2016-09-08 |
| 7 | Modelado de procesos |  | 2016-09-12 → 2016-09-14 (+2d) | 3d → 5d | 75% → 50% | -1d → 0d | 5 → none | resources none → Pablo de la Sotta; baseline start none → 2016-09-08; baseline finish none → 2016-09-14 |
| 21 | Fin iteración 1 | 2016-09-21 → 2016-09-25 (+4d) | 2016-09-21 → 2016-09-25 (+4d) |  |  |  |  | baseline start none → 2016-09-25; baseline finish none → 2016-09-25 |
| 22 | **Diseño** | 2016-09-13 → 2016-09-26 (+13d) | 2016-09-20 → 2016-09-30 (+10d) |  |  | -1d → 4d | 1 → 17 | was named Diseño de procesos; baseline start none → 2016-09-26; baseline finish none → 2016-09-30 |
| 27 | Modelo de datos | 2016-09-20 → 2016-09-26 (+6d) | 2016-09-20 → 2016-09-27 (+7d) | 1d → 2d |  | -1d → 7d | Diseño modelo lógico → none | was named Diseñar modelo físico; baseline start none → 2016-09-26; baseline finish none → 2016-09-27 |
| 28 | **Estructuración** | 2016-09-21 → 2016-09-26 (+5d) | 2016-09-22 → 2016-09-27 (+5d) |  |  | 34d → 39d | 22 → 17 | baseline start none → 2016-09-26; baseline finish none → 2016-09-27 |
| 29 | Recopilación de los datos existentes del centro médico | 2016-09-21 → 2016-09-26 (+5d) | 2016-09-22 → 2016-09-27 (+5d) |  |  | 34d → 39d |  | baseline start none → 2016-09-26; baseline finish none → 2016-09-27 |
| 30 | Limpieza de datos no-reutilizables de la clínica | 2016-09-21 → 2016-09-26 (+5d) | 2016-09-22 → 2016-09-27 (+5d) |  |  | 34d → 39d |  | baseline start none → 2016-09-26; baseline finish none → 2016-09-27 |
| 31 | **Adquisiciones** | 2016-09-21 → 2016-09-26 (+5d) | 2016-09-22 → 2016-09-27 (+5d) |  |  | -1d → 39d | 22 → 17 | baseline start none → 2016-09-26; baseline finish none → 2016-09-27 |
| 32 | Adquisición de recursos tecnológicos | 2016-09-21 → 2016-09-26 (+5d) | 2016-09-21 → 2016-09-26 (+5d) |  |  | -1d → 40d |  | baseline start none → 2016-09-26; baseline finish none → 2016-09-26 |
| 33 | Adquisición de recursos físicos | 2016-09-21 → 2016-09-26 (+5d) | 2016-09-21 → 2016-09-26 (+5d) |  |  | 34d → 39d |  | baseline start none → 2016-09-26; baseline finish none → 2016-09-26 |
| 34 | Instalación de recursos físicos | 2016-09-22 → 2016-09-27 (+5d) | 2016-09-22 → 2016-09-27 (+5d) |  |  | 34d → 39d |  | baseline start none → 2016-09-27; baseline finish none → 2016-09-27 |
| 35 | **Construcción** | 2016-09-21 → 2016-10-03 (+12d) | 2016-10-13 → 2016-10-30 (+17d) | 16d → 19d |  |  | 32 → 22 | baseline start none → 2016-10-03; baseline finish none → 2016-10-24 |
| 36 | **Desarrollo de aplicaciones** | 2016-09-22 → 2016-10-03 (+11d) | 2016-10-07 → 2016-10-19 (+12d) |  |  | 0d → 4d |  | baseline start none → 2016-10-03; baseline finish none → 2016-10-19 |
| 37 | Desarrollo módulo ingreso de pacientes | 2016-09-22 → 2016-10-03 (+11d) | 2016-09-23 → 2016-10-04 (+11d) |  |  | 2d → 6d |  | baseline start none → 2016-10-03; baseline finish none → 2016-10-04 |
| 38 | Desarrollo módulo agendamiento de horas | 2016-09-26 → 2016-10-05 (+9d) | 2016-09-30 → 2016-10-12 (+12d) |  |  | 2d → 6d |  | baseline start none → 2016-10-05; baseline finish none → 2016-10-12 |
| 39 | Desarrollo módulo agenda personal | 2016-10-03 → 2016-10-13 (+10d) | 2016-10-05 → 2016-10-17 (+12d) |  |  | 2d → 6d |  | baseline start none → 2016-10-13; baseline finish none → 2016-10-17 |
| 40 | Desarrollo módulo registro de paciente | 2016-09-22 → 2016-10-03 (+11d) | 2016-09-23 → 2016-10-04 (+11d) |  |  | 0d → 4d |  | baseline start none → 2016-10-03; baseline finish none → 2016-10-04 |
| 41 | Desarrollo módulo ficha médica | 2016-09-26 → 2016-10-05 (+9d) | 2016-09-28 → 2016-10-07 (+9d) |  |  | 0d → 4d |  | baseline start none → 2016-10-05; baseline finish none → 2016-10-07 |
| 42 | Desarrollo módulo post atención | 2016-09-29 → 2016-10-11 (+12d) | 2016-09-30 → 2016-10-12 (+12d) |  |  | 0d → 4d |  | baseline start none → 2016-10-11; baseline finish none → 2016-10-12 |
| 43 | Desarrollo módulo consultas especialistas | 2016-10-03 → 2016-10-13 (+10d) | 2016-10-04 → 2016-10-14 (+10d) |  |  | 0d → 4d |  | baseline start none → 2016-10-13; baseline finish none → 2016-10-14 |
| 44 | Desarrollo módulo mantenedores | 2016-10-05 → 2016-10-17 (+12d) | 2016-10-07 → 2016-10-19 (+12d) |  |  | 0d → 4d |  | baseline start none → 2016-10-17; baseline finish none → 2016-10-19 |
| 45 | Desarrollo módulo de cajas | 2016-09-22 → 2016-10-03 (+11d) | 2016-09-26 → 2016-10-05 (+9d) |  |  | 1d → 5d |  | baseline start none → 2016-10-03; baseline finish none → 2016-10-05 |
| 46 | Desarrollo módulo de anulaciones | 2016-09-27 → 2016-10-06 (+9d) | 2016-09-29 → 2016-10-11 (+12d) |  |  | 1d → 5d |  | baseline start none → 2016-10-06; baseline finish none → 2016-10-11 |
| 47 | Desarrollo módulo pago de honorarios | 2016-09-30 → 2016-10-12 (+12d) | 2016-10-04 → 2016-10-14 (+10d) |  |  | 1d → 5d |  | baseline start none → 2016-10-12; baseline finish none → 2016-10-14 |
| 48 | Desarrollo módulo reporte de ingreso | 2016-10-05 → 2016-10-17 (+12d) | 2016-10-06 → 2016-10-18 (+12d) |  |  | 1d → 5d |  | baseline start none → 2016-10-17; baseline finish none → 2016-10-18 |
| 49 | Programación de base de datos | 2016-09-22 → 2016-10-03 (+11d) | 2016-10-07 → 2016-10-19 (+12d) |  |  | 0d → 4d |  | baseline start none → 2016-10-03; baseline finish none → 2016-10-19 |
| 50 | Integración de aplicaciones | 2016-10-11 → 2016-10-20 (+9d) | 2016-10-13 → 2016-10-24 (+11d) |  |  | 0d → 4d |  | baseline start none → 2016-10-20; baseline finish none → 2016-10-24 |
| 51 | Generación de documentación y planes de prueba | 2016-09-22 → 2016-10-03 (+11d) | 2016-10-13 → 2016-10-24 (+11d) |  |  | 0d → 4d |  | baseline start none → 2016-10-03; baseline finish none → 2016-10-24 |
| 52 | Fin iteración 2 | 2016-10-24 → 2016-10-30 (+6d) | 2016-10-24 → 2016-10-30 (+6d) |  |  |  |  | baseline start none → 2016-10-30; baseline finish none → 2016-10-30 |
| 53 | **Pruebas de calidad** | 2016-10-21 → 2016-11-09 (+19d) | 2016-11-03 → 2016-11-18 (+15d) |  |  |  |  | was named Testing; baseline start none → 2016-11-03; baseline finish none → 2016-11-14 |
| 54 | Pruebas unitarias | 2016-10-21 → 2016-11-09 (+19d) | 2016-10-25 → 2016-11-11 (+17d) |  |  |  |  | was named Caja negra; baseline start none → 2016-11-03; baseline finish none → 2016-11-07 |
| 55 | Pruebas de integración | 2016-10-21 → 2016-11-09 (+19d) | 2016-10-24 → 2016-11-11 (+18d) | 2d → 3d |  | 1d → 0d |  | was named Caja blanca; baseline start none → 2016-11-03; baseline finish none → 2016-11-07 |
| 57 | Corrección de errores | 2016-10-26 → 2016-11-15 (+20d) | 2016-11-03 → 2016-11-18 (+15d) | 5d → 4d |  |  | 54, 55 → 56 | baseline start none → 2016-11-09; baseline finish none → 2016-11-14 |
| 58 | **Migración** | 2016-11-04 → 2016-11-21 (+17d) | 2016-11-08 → 2016-11-22 (+14d) | 3d → 2d |  | 0d → 1d |  | baseline start none → 2016-11-15; baseline finish none → 2016-11-16 |
| 59 | **Carga de información** | 2016-11-04 → 2016-11-21 (+17d) | 2016-11-08 → 2016-11-22 (+14d) | 3d → 2d |  | 0d → 1d |  | baseline start none → 2016-11-15; baseline finish none → 2016-11-16 |
| 60 | Registrar datos análogos | 2016-11-04 → 2016-11-21 (+17d) | 2016-11-08 → 2016-11-22 (+14d) | 3d → 2d |  | 0d → 1d |  | baseline start none → 2016-11-15; baseline finish none → 2016-11-16 |
| 61 | Registro de pacientes nuevos | 2016-11-04 → 2016-11-21 (+17d) | 2016-11-07 → 2016-11-22 (+15d) |  |  |  |  | baseline start none → 2016-11-15; baseline finish none → 2016-11-16 |
| 62 | **Implantación** | 2016-11-09 → 2016-11-21 (+12d) | 2016-11-11 → 2016-11-23 (+12d) |  |  |  | 58 → 53, 58 | was named Implementación; baseline start none → 2016-11-15; baseline finish none → 2016-11-17 |
| 63 | Implementación de sistema en toda la empresa | 2016-11-09 → 2016-11-21 (+12d) | 2016-11-09 → 2016-11-21 (+12d) |  |  |  |  | baseline start none → 2016-11-15; baseline finish none → 2016-11-15 |
| 64 | Capacitación del personal | 2016-11-09 → 2016-11-21 (+12d) | 2016-11-09 → 2016-11-21 (+12d) |  |  |  |  | baseline start none → 2016-11-15; baseline finish none → 2016-11-15 |
| 65 | Marcha blanca | 2016-11-09 → 2016-11-21 (+12d) | 2016-11-11 → 2016-11-23 (+12d) |  |  |  |  | baseline start none → 2016-11-15; baseline finish none → 2016-11-17 |
| 66 | **Cierre** | 2016-11-14 → 2016-11-24 (+10d) | 2016-11-14 → 2016-11-24 (+10d) |  |  |  | 62 → 62, 58 | baseline start none → 2016-11-18; baseline finish none → 2016-11-18 |
| 67 | Entrega de documentación | 2016-11-14 → 2016-11-24 (+10d) | 2016-11-14 → 2016-11-24 (+10d) |  |  |  |  | baseline start none → 2016-11-18; baseline finish none → 2016-11-18 |
| 68 | Generar acta de cierre | 2016-11-14 → 2016-11-24 (+10d) | 2016-11-14 → 2016-11-24 (+10d) |  |  |  |  | baseline start none → 2016-11-18; baseline finish none → 2016-11-18 |
| 69 | Fin iteración 3 | 2016-11-14 → 2016-11-20 (+6d) | 2016-11-14 → 2016-11-20 (+6d) |  |  |  |  | baseline start none → 2016-11-20; baseline finish none → 2016-11-20 |

## Version 3 (saved 2016-09-13)

Note of the change: Corrección carta Gantt

Last finish stays 2016-11-24. Complete tasks 3 → 5.

Changed:

| ID | Task | Start | Finish | Duration | Complete | Total float | Predecessors | Other |
| --- | --- | --- | --- | --- | --- | --- | --- | --- |
| 17 | **Recursos Humanos** |  | 2016-09-23 → 2016-09-25 (+2d) |  | 38% → 75% | 4d → 1d |  |  |
| 19 | Distribución de RRHH | 2016-09-22 A | 2016-09-22 A |  | 0% → 100% | 5d → none |  |  |
| 20 | Cronograma |  | 2016-09-23 A |  | 75% → 100% | 4d → none |  |  |
| 56 | Corrección de errores | 2016-11-15 → 2016-11-14 (-1d) | 2016-11-18 → 2016-11-17 (-1d) |  |  | 0d → -3d | 57 → 54, 55 |  |
| 57 | Aceptación | 2016-11-14 → 2016-11-18 (+4d) | 2016-11-14 → 2016-11-18 (+4d) |  |  | 0d → -3d | 54, 55 → 56 |  |
| 62 | **Implantación** |  |  |  |  | 0d → -3d | 53, 58 → 53 |  |
| 63 | Implantación de sistema en toda la empresa |  |  |  |  | 2d → -1d |  | was named Implementación de sistema en toda la empresa |
| 66 | **Cierre** | 2016-11-24 → 2016-11-20 (-4d) |  | 1d → 4d |  |  |  |  |

## Version 4 (saved 2016-09-15)

Note of the change: Correccion de cronograma

Last finish 2016-11-24 → 2016-11-20 (-4d). Complete tasks 5 → 12.

Added:

| ID | Task | Duration | Start | Finish |
| --- | --- | --- | --- | --- |
| 36 | Desarrollo módulo de seguros | 2d | 2016-10-03 | 2016-10-04 |

Removed: 12 Objetivos y prioridades

Changed:

| ID | Task | Start | Finish | Duration | Complete | Total float | Predecessors | Other |
| --- | --- | --- | --- | --- | --- | --- | --- | --- |
| 1 | **Análisis y Planificación** |  | 2016-09-14 A |  | 75% → 100% | 0d → none |  |  |
| 6 | **Organización** |  | 2016-09-14 A |  | 31% → 100% | 0d → none |  |  |
| 7 | Modelado de procesos |  | 2016-09-14 A |  | 50% → 100% | 0d → none |  |  |
| 8 | Estructura organizacional | 2016-09-09 A | 2016-09-09 A |  | 0% → 100% | 3d → none |  |  |
| 9 | Establecer responsables | 2016-09-09 A | 2016-09-09 A |  | 0% → 100% | 2d → none |  |  |
| 10 | Interfaces e interacciones | 2016-09-12 A | 2016-09-12 A |  | 0% → 100% | 2d → none |  |  |
| 11 | **Gestión** |  |  |  | 10% → 50% |  |  |  |
| 12 | Condiciones asumidas, dependencias y restricciones | 2016-09-15 A | 2016-09-15 A |  | 0% → 100% | 3d → none |  | resources none → Elías Baeza |
| 13 | Gestión de riesgos | 2016-09-15 A | 2016-09-16 A |  | 0% → 100% | 1d → none |  |  |
| 14 | Mecanismo de control y ajuste | 2016-09-15 A |  |  | 0% → 25% |  |  | resources Pablo de la Sotta → Elías Baeza |
| 15 | Recursos |  |  |  |  |  |  | resources Fabián Jaque → Fabián Jaque; Gonzalo López |
| 16 | **Recursos Humanos** |  |  |  | 75% → 99% | 1d → 0d |  |  |
| 17 | Dependencias | 2016-09-22 A | 2016-09-22 A |  | 0% → 100% | 2d → none |  |  |
| 37 | Desarrollo módulo ingreso de pacientes | 2016-10-03 → 2016-10-05 (+2d) | 2016-10-04 → 2016-10-06 (+2d) |  |  | 3d → 4d | none → 36 |  |
| 38 | Desarrollo módulo agendamiento de horas | 2016-10-05 → 2016-10-07 (+2d) | 2016-10-12 → 2016-10-14 (+2d) |  |  | 3d → 4d |  |  |
| 39 | Desarrollo módulo agenda personal | 2016-10-13 → 2016-10-17 (+4d) | 2016-10-17 → 2016-10-19 (+2d) |  |  | 3d → 4d |  |  |
| 53 | **Pruebas de calidad** |  | 2016-11-18 → 2016-11-15 (-3d) | 8d → 5d |  | -3d → 0d |  |  |
| 56 | Pruebas de aceptación | 2016-11-18 → 2016-11-09 (-9d) | 2016-11-18 → 2016-11-11 (-7d) | 1d → 3d |  | -3d → 0d | 57 → none | was named Aceptación |
| 57 | Corrección de errores | 2016-11-14 → 2016-11-10 (-4d) | 2016-11-17 → 2016-11-15 (-2d) |  |  | -3d → 0d | 54, 55 → 54SS+1d, 55SS+1d, 56SS+1d |  |
| 58 | **Migración** | 2016-11-21 → 2016-11-16 (-5d) | 2016-11-22 → 2016-11-17 (-5d) |  |  | -2d → 0d |  |  |
| 59 | **Carga de información** | 2016-11-21 → 2016-11-16 (-5d) | 2016-11-22 → 2016-11-17 (-5d) |  |  | -2d → 0d |  |  |
| 60 | Registrar datos análogos | 2016-11-21 → 2016-11-16 (-5d) | 2016-11-22 → 2016-11-17 (-5d) |  |  | -2d → 0d |  |  |
| 61 | Registro de pacientes nuevos | 2016-11-21 → 2016-11-16 (-5d) | 2016-11-22 → 2016-11-17 (-5d) |  |  | -2d → 0d |  |  |
| 62 | **Implantación** | 2016-11-21 → 2016-11-16 (-5d) | 2016-11-23 → 2016-11-17 (-6d) | 3d → 2d |  | -3d → 0d |  |  |
| 63 | Implementación de sistema en toda la empresa | 2016-11-21 → 2016-11-16 (-5d) | 2016-11-21 → 2016-11-16 (-5d) |  |  | -1d → 1d |  | was named Implantación de sistema en toda la empresa |
| 64 | Capacitación del personal | 2016-11-21 → 2016-11-16 (-5d) | 2016-11-21 → 2016-11-16 (-5d) |  |  | -1d → 1d |  |  |
| 65 | Marcha blanca | 2016-11-21 → 2016-11-16 (-5d) | 2016-11-23 → 2016-11-17 (-6d) | 3d → 2d |  | -3d → 0d |  |  |
| 66 | **Cierre** | 2016-11-20 → 2016-11-18 (-2d) | 2016-11-24 → 2016-11-20 (-4d) | 4d → 1d |  |  |  |  |
| 67 | Entrega de documentación | 2016-11-24 → 2016-11-18 (-6d) | 2016-11-24 → 2016-11-18 (-6d) |  |  |  |  |  |
| 68 | Generar acta de cierre | 2016-11-24 → 2016-11-18 (-6d) | 2016-11-24 → 2016-11-18 (-6d) |  |  |  |  |  |
