# gantt_hipocrates

How a schedule from MS Project changed from version to version. A marks actual dates.

## Version 1 (saved 2016-10-03)

Note of the change: Nueva gantt con toda violencia

| ID | WBS | Task | Duration | Start | Finish | Total float |
| --- | --- | --- | --- | --- | --- | --- |
| 1 | 1 | **Iteración 1: Planificación del proyecto** | 1d? | 2016-10-03 | 2016-10-03 | 0d |
| 2 | 1.1 | **Análisis y planificación del proyecto** | 1d? | 2016-10-03 | 2016-10-03 | 0d |
| 3 | 1.1.1 | **Definición del proyecto** | 1d? | 2016-10-03 | 2016-10-03 | 0d |
| 4 |  | Elaborar alcance | 1d? | 2016-10-03 | 2016-10-03 |  |
| 5 |  | Elaborar ERS | 1d? | 2016-10-03 | 2016-10-03 |  |
| 6 |  | Elaborar modelos de proceso | 1d? | 2016-10-03 | 2016-10-03 |  |
| 7 |  | Entrega ERS | 0d | 2016-10-03 | 2016-10-03 |  |
| 8 |  | Entrega documento Alcance | 0d | 2016-10-03 | 2016-10-03 |  |
| 9 |  | Entregar modelos de proceso | 1d? | 2016-10-03 | 2016-10-03 |  |
| 10 |  | Entrega Matriz de objetivos | 0d | 2016-10-03 | 2016-10-03 |  |
| 11 | 1.1.2 | **Organización del proyecto** | 1d? | 2016-10-03 | 2016-10-03 | 0d |
| 12 |  | Elaborar estructura organizacional | 1d? | 2016-10-03 | 2016-10-03 |  |
| 13 |  | Establecer responsables | 1d? | 2016-10-03 | 2016-10-03 |  |
| 14 |  | Establecer interfaces e interacciones | 1d? | 2016-10-03 | 2016-10-03 |  |
| 15 |  | Entregar documento organizacional | 1d? | 2016-10-03 | 2016-10-03 |  |
| 16 | 1.2 | **Planificación de gestión** | 1d? | 2016-10-03 | 2016-10-03 | 0d |
| 17 |  | Definir restricciones | 1d? | 2016-10-03 | 2016-10-03 |  |
| 18 |  | Elaborar plan de gestión de riesgos | 1d? | 2016-10-03 | 2016-10-03 |  |
| 19 |  | Definir condiciones asumidas | 1d? | 2016-10-03 | 2016-10-03 |  |
| 20 |  | Elaborar mecanismos de control y ajuste | 1d? | 2016-10-03 | 2016-10-03 |  |
| 21 |  | Entregar plan de gestión | 0d | 2016-10-03 | 2016-10-03 |  |
| 22 | 1.3 | **Recursos humanos** | 1d? | 2016-10-03 | 2016-10-03 | 0d |
| 23 |  | Planificar distribución de recursos humanos | 1d? | 2016-10-03 | 2016-10-03 |  |
| 24 |  | Establecer dependencias | 1d? | 2016-10-03 | 2016-10-03 |  |
| 25 |  | Elaborar cronograma | 1d? | 2016-10-03 | 2016-10-03 |  |
| 26 |  | Entregar plan de recursos humanos | 0d | 2016-10-03 | 2016-10-03 |  |
| 27 |  | Entregar plan de proyecto | 0d | 2016-10-03 | 2016-10-03 |  |
| 28 | 2 | **Iteración 2: Diseño del sistema** | 1d? | 2016-10-03 | 2016-10-03 | 0d |
| 29 | 2.1 | **Arquitectura** | 1d? | 2016-10-03 | 2016-10-03 | 0d |
| 30 |  | Elaborar casos de uso | 1d? | 2016-10-03 | 2016-10-03 |  |
| 31 |  | Elaborar especificación de casos de uso | 1d? | 2016-10-03 | 2016-10-03 |  |
| 32 |  | Elaborar diagrama de despliegue | 1d? | 2016-10-03 | 2016-10-03 |  |
| 33 |  | Entrega documento arquitectura | 1d? | 2016-10-03 | 2016-10-03 |  |
| 34 | 2.2 | **Modelo de datos CMH** | 1d? | 2016-10-03 | 2016-10-03 | 0d |
| 35 |  | Elaborar modelo de datos | 1d? | 2016-10-03 | 2016-10-03 |  |
| 36 |  | Elaborar especificación procedimiento almacenado | 1d? | 2016-10-03 | 2016-10-03 |  |
| 37 |  | Entregar especificación de procedimiento almacenado | 1d? | 2016-10-03 | 2016-10-03 |  |
| 38 |  | Entregar modelo de datos | 1d? | 2016-10-03 | 2016-10-03 |  |
| 39 | 2.3 | **Módulo WS** | 1d? | 2016-10-03 | 2016-10-03 | 0d |
| 40 |  | Diagramar clases | 1d? | 2016-10-03 | 2016-10-03 |  |
| 41 |  | Diagramar secuencias | 1d? | 2016-10-03 | 2016-10-03 |  |
| 42 |  | Elaborar casos prueba | 1d? | 2016-10-03 | 2016-10-03 |  |
| 43 |  | Entregar documentación WS | 1d? | 2016-10-03 | 2016-10-03 |  |
| 44 | 2.4 | **Aplicación Web** | 1d? | 2016-10-03 | 2016-10-03 | 0d |
| 45 |  | Diagramar clases | 1d? | 2016-10-03 | 2016-10-03 |  |
| 46 |  | Diagramar secuencias | 1d? | 2016-10-03 | 2016-10-03 |  |
| 47 |  | Elaborar casos prueba | 1d? | 2016-10-03 | 2016-10-03 |  |
| 48 |  | Entregar documentación aplicación web | 1d? | 2016-10-03 | 2016-10-03 |  |
| 49 | 2.5 | **Website** | 1d? | 2016-10-03 | 2016-10-03 | 0d |
| 50 |  | Diagramar clases | 1d? | 2016-10-03 | 2016-10-03 |  |
| 51 |  | Diagramar secuencias | 1d? | 2016-10-03 | 2016-10-03 |  |
| 52 |  | Elaborar casos prueba | 1d? | 2016-10-03 | 2016-10-03 |  |
| 53 |  | Elaborar bocetos Website | 1d? | 2016-10-03 | 2016-10-03 |  |
| 54 |  | Entregar documentación Website | 1d? | 2016-10-03 | 2016-10-03 |  |
| 55 | 2.6 | **Terminal** | 1d | 2016-10-03 | 2016-10-03 | 0d |
| 56 |  | Diagramar clases | 1d | 2016-10-03 | 2016-10-03 |  |
| 57 |  | Diagramar secuencias | 1d | 2016-10-03 | 2016-10-03 |  |
| 58 |  | Elaborar casos prueba | 1d | 2016-10-03 | 2016-10-03 |  |
| 59 |  | Elaborar bocetos Website | 1d | 2016-10-03 | 2016-10-03 |  |
| 60 |  | Entregar documentación Website | 1d | 2016-10-03 | 2016-10-03 |  |
| 61 | 2.7 | **WS Aseguradora** | 1d? | 2016-10-03 | 2016-10-03 | 0d |
| 62 |  | Diagramar clases | 1d? | 2016-10-03 | 2016-10-03 |  |
| 63 |  | Diagramar secuencias | 1d? | 2016-10-03 | 2016-10-03 |  |
| 64 |  | Elaborar casos de prueba | 1d? | 2016-10-03 | 2016-10-03 |  |
| 65 |  | Elaborar modelo de datos | 1d? | 2016-10-03 | 2016-10-03 |  |
| 66 |  | Entregar documentación WS Aseguradora | 1d? | 2016-10-03 | 2016-10-03 |  |
| 67 |  | Entregar diseño del sistema | 1d? | 2016-10-03 | 2016-10-03 | 0d |
| 68 | 3 | **Iteración 3: Construcción del sistema** | 1d? | 2016-10-03 | 2016-10-03 | 0d |
| 69 | 3.1 | **Script BD CMH** | 1d? | 2016-10-03 | 2016-10-03 | 0d |
| 70 |  | Construcción script BD CMH | 1d? | 2016-10-03 | 2016-10-03 |  |

| ID | WBS | Task | Duration | Start | Finish | Total float |
| --- | --- | --- | --- | --- | --- | --- |
| 71 |  | Entrega script BD CMH | 1d? | 2016-10-03 | 2016-10-03 |  |
| 72 | 3.2 | **Módulo WS** | 1d? | 2016-10-03 | 2016-10-03 | 0d |
| 73 |  | Construcción WS | 1d? | 2016-10-03 | 2016-10-03 |  |
| 74 |  | Entrega WS | 1d? | 2016-10-03 | 2016-10-03 |  |
| 75 | 3.3 | **Aplicación Web** | 1d? | 2016-10-03 | 2016-10-03 | 0d |
| 76 |  | Construcción web | 1d? | 2016-10-03 | 2016-10-03 |  |
| 77 |  | Entrega módulo web | 1d? | 2016-10-03 | 2016-10-03 |  |
| 78 | 3.4 | **Website** | 1d? | 2016-10-03 | 2016-10-03 | 0d |
| 79 |  | Construcción módulo Website | 1d? | 2016-10-03 | 2016-10-03 |  |
| 80 |  | Entrega módulo Website | 1d? | 2016-10-03 | 2016-10-03 |  |
| 81 | 3.5 | **Terminal** | 1d? | 2016-10-03 | 2016-10-03 | 0d |
| 82 |  | Construcción módulo terminal | 1d? | 2016-10-03 | 2016-10-03 |  |
| 83 |  | Entrega módulo terminal | 1d? | 2016-10-03 | 2016-10-03 |  |
| 84 | 3.6 | **WS Aseguradora** | 1d? | 2016-10-03 | 2016-10-03 | 0d |
| 85 |  | Construcción script BD CMH | 1d? | 2016-10-03 | 2016-10-03 |  |
| 86 |  | Construcción módulo aseguradora | 1d? | 2016-10-03 | 2016-10-03 |  |
| 87 |  | Entrega script BD WS Aseguradora | 1d? | 2016-10-03 | 2016-10-03 |  |
| 88 |  | Entrega módulo WS Aseguradora | 1d? | 2016-10-03 | 2016-10-03 |  |
| 89 |  | Entrega del sistema | 1d? | 2016-10-03 | 2016-10-03 |  |

## Version 2 (saved 2016-10-04)

Note of the change: Asignación de tiempos a tareas

Last finish 2016-10-03 → 2016-11-20 (+48d). Complete tasks 0 → 24.

Added:

| ID | Task | Duration | Start | Finish | Predecessors | Resources |
| --- | --- | --- | --- | --- | --- | --- |
| 7 | Establecer objetivos | 3d | 2016-08-29 A | 2016-08-31 A |  | Elías Baeza |
| 32 | Diagramar casos de uso | 1d | 2016-09-29 A | 2016-09-29 A | 31 | Elías Baeza |
| 38 | Elaborar diccionario de datos | 1d | 2016-10-07 | 2016-10-07 | 37 |  |
| 92 | **Pruebas de calidad** | 5d | 2016-11-14 | 2016-11-18 |  |  |
| 93 | Pruebas unitarias | 4d | 2016-11-14 | 2016-11-17 | 81 |  |
| 94 | Pruebas de integración | 2d | 2016-11-16 | 2016-11-17 | 84, 87 |  |
| 95 | Pruebas de aceptación | 1d | 2016-11-18 | 2016-11-18 | 94 |  |

Changed:

| ID | Task | Start | Finish | Duration | Complete | Total float | Predecessors | Other |
| --- | --- | --- | --- | --- | --- | --- | --- | --- |
| 1 | **Iteración 1: Planificación del proyecto** | 2016-10-03 → 2016-08-29 A (-35d) | 2016-10-03 → 2016-09-25 A (-8d) | 1d? → 19d | 0% → 100% | 0d → none |  |  |
| 2 | **Análisis y planificación del proyecto** | 2016-10-03 → 2016-08-29 A (-35d) | 2016-10-03 → 2016-09-13 A (-20d) | 1d? → 12d | 0% → 100% | 0d → none |  |  |
| 3 | **Definición del proyecto** | 2016-10-03 → 2016-08-29 A (-35d) | 2016-10-03 → 2016-09-09 A (-24d) | 1d? → 10d | 0% → 100% | 0d → none |  |  |
| 4 | Elaborar alcance | 2016-10-03 → 2016-08-29 A (-35d) | 2016-10-03 → 2016-09-02 A (-31d) | 1d? → 5d | 0% → 100% |  |  | resources none → Fabián Jaque; Gonzalo López |
| 5 | Elaborar ERS | 2016-10-03 → 2016-08-29 A (-35d) | 2016-10-03 → 2016-09-02 A (-31d) | 1d? → 5d | 0% → 100% |  |  | resources none → Tomás Muñiz |
| 6 | Elaborar modelos de proceso | 2016-10-03 → 2016-08-29 A (-35d) | 2016-10-03 → 2016-09-09 A (-24d) | 1d? → 10d | 0% → 100% |  |  | resources none → Pablo de la Sotta |
| 8 | Entrega documento alcance | 2016-10-03 → 2016-09-02 A (-31d) | 2016-10-03 → 2016-09-02 A (-31d) |  | 0% → 100% |  | none → 4 | was named Entrega documento Alcance |
| 9 | Entrega ERS | 2016-10-03 → 2016-09-02 A (-31d) | 2016-10-03 → 2016-09-02 A (-31d) |  | 0% → 100% |  | none → 5 |  |
| 10 | Entregar modelos de proceso | 2016-10-03 → 2016-09-09 A (-24d) | 2016-10-03 → 2016-09-09 A (-24d) | 1d? → 0d | 0% → 100% |  | none → 6 |  |
| 11 | Entrega matriz de objetivos | 2016-10-03 → 2016-08-31 A (-33d) | 2016-10-03 → 2016-08-31 A (-33d) |  | 0% → 100% |  | none → 7 | was named Entrega Matriz de objetivos |
| 12 | **Organización del proyecto** | 2016-10-03 → 2016-09-12 A (-21d) | 2016-10-03 → 2016-09-13 A (-20d) | 1d? → 2d | 0% → 100% | 0d → none | none → 3 |  |
| 13 | Elaborar estructura organizacional | 2016-10-03 → 2016-09-12 A (-21d) | 2016-10-03 → 2016-09-12 A (-21d) | 1d? → 1d | 0% → 100% |  |  | resources none → Gonzalo López |
| 14 | Establecer responsables | 2016-10-03 → 2016-09-12 A (-21d) | 2016-10-03 → 2016-09-12 A (-21d) | 1d? → 1d | 0% → 100% |  |  | resources none → Tomás Muñiz |
| 15 | Establecer interfaces e interacciones | 2016-10-03 → 2016-09-13 A (-20d) | 2016-10-03 → 2016-09-13 A (-20d) | 1d? → 1d | 0% → 100% |  | none → 14 | resources none → Tomás Muñiz |
| 16 | Entregar documento organizacional | 2016-10-03 → 2016-09-13 A (-20d) | 2016-10-03 → 2016-09-13 A (-20d) | 1d? → 0d | 0% → 100% |  | none → 13, 14, 15 |  |
| 17 | **Planificación de gestión** | 2016-10-03 → 2016-09-14 A (-19d) | 2016-10-03 → 2016-09-16 A (-17d) | 1d? → 3d | 0% → 100% | 0d → none | none → 12 |  |
| 18 | Definir restricciones | 2016-10-03 → 2016-09-14 A (-19d) | 2016-10-03 → 2016-09-15 A (-18d) | 1d? → 2d | 0% → 100% |  |  | resources none → Elías Baeza |
| 19 | Elaborar plan de gestión de riesgos | 2016-10-03 → 2016-09-14 A (-19d) | 2016-10-03 → 2016-09-15 A (-18d) | 1d? → 2d | 0% → 100% |  |  | resources none → Fabián Jaque |
| 20 | Definir condiciones asumidas | 2016-10-03 → 2016-09-14 A (-19d) | 2016-10-03 → 2016-09-14 A (-19d) | 1d? → 1d | 0% → 100% |  |  | resources none → Pablo de la Sotta |
| 21 | Elaborar mecanismos de control y ajuste | 2016-10-03 → 2016-09-16 A (-17d) | 2016-10-03 → 2016-09-16 A (-17d) | 1d? → 1d | 0% → 100% |  | none → 18 | resources none → Elías Baeza |
| 22 | Entregar plan de gestión | 2016-10-03 → 2016-09-16 A (-17d) | 2016-10-03 → 2016-09-16 A (-17d) |  | 0% → 100% |  | none → 20, 21, 19 |  |
| 23 | **Recursos humanos** | 2016-10-03 → 2016-09-20 A (-13d) | 2016-10-03 → 2016-09-23 A (-10d) | 1d? → 4d | 0% → 100% | 0d → none | none → 17 |  |
| 24 | Planificar distribución de recursos humanos | 2016-10-03 → 2016-09-20 A (-13d) | 2016-10-03 → 2016-09-20 A (-13d) | 1d? → 1d | 0% → 100% |  |  | resources none → Fabián Jaque |
| 25 | Establecer dependencias | 2016-10-03 → 2016-09-20 A (-13d) | 2016-10-03 → 2016-09-20 A (-13d) | 1d? → 1d | 0% → 100% |  |  | resources none → Tomás Muñiz |
| 26 | Elaborar cronograma | 2016-10-03 → 2016-09-21 A (-12d) | 2016-10-03 → 2016-09-23 A (-10d) | 1d? → 3d | 0% → 100% |  | none → 24 | resources none → Fabián Jaque |
| 27 | Entregar plan de recursos humanos | 2016-10-03 → 2016-09-23 A (-10d) | 2016-10-03 → 2016-09-23 A (-10d) |  | 0% → 100% |  | none → 25, 26 |  |
| 28 | Entregar plan de proyecto | 2016-10-03 → 2016-09-25 A (-8d) | 2016-10-03 → 2016-09-25 A (-8d) |  | 0% → 100% |  |  | constraint none → finish no earlier than 2016-09-25 |
| 29 | **Iteración 2: Diseño del sistema** | 2016-10-03 → 2016-09-26 A (-7d) | 2016-10-03 → 2016-10-30 (+27d) | 1d? → 24d | 0% → 18% |  | none → 1 |  |
| 30 | **Arquitectura** | 2016-10-03 → 2016-09-26 A (-7d) | 2016-10-03 → 2016-10-04 (+1d) | 1d? → 7d | 0% → 80% |  |  |  |
| 31 | Elaborar casos de uso | 2016-10-03 → 2016-09-26 A (-7d) | 2016-10-03 → 2016-09-28 A (-5d) | 1d? → 3d | 0% → 100% |  |  | resources none → Fabián Jaque; Pablo de la Sotta |
| 33 | Elaborar especificación de casos de uso | 2016-10-03 → 2016-09-29 A (-4d) | 2016-10-03 → 2016-10-04 (+1d) | 1d? → 4d | 0% → 75% | none → 0d | none → 31 | resources none → Gonzalo López; Tomás Muñiz |
| 34 | Elaborar diagrama de despliegue | 2016-10-03 → 2016-09-29 A (-4d) | 2016-10-03 → 2016-09-30 (-3d) | 1d? → 2d | 0% → 50% | none → 2d | none → 31 | resources none → Pablo de la Sotta |
| 35 | Entrega documento arquitectura | 2016-10-03 → 2016-10-04 (+1d) | 2016-10-03 → 2016-10-04 (+1d) | 1d? → 0d |  | none → 0d | none → 33, 34 |  |
| 36 | **Modelo de datos CMH** | 2016-10-03 → 2016-10-05 (+2d) | 2016-10-03 → 2016-10-07 (+4d) | 1d? → 3d |  |  | none → 30 |  |
| 37 | Elaborar modelo de datos | 2016-10-03 → 2016-10-05 (+2d) | 2016-10-03 → 2016-10-06 (+3d) | 1d? → 2d |  | none → 0d |  | resources none → Pablo de la Sotta |
| 39 | Elaborar especificación procedimiento almacenado | 2016-10-03 → 2016-10-07 (+4d) | 2016-10-03 → 2016-10-07 (+4d) | 1d? → 1d |  | none → 0d | none → 37 |  |
| 40 | Entregar modelo de datos | 2016-10-03 → 2016-10-07 (+4d) | 2016-10-03 → 2016-10-07 (+4d) | 1d? → 0d |  | none → 0d | none → 38 |  |
| 41 | Entregar especificación de procedimiento almacenado | 2016-10-03 → 2016-10-07 (+4d) | 2016-10-03 → 2016-10-07 (+4d) | 1d? → 0d |  | none → 0d | none → 39 |  |
| 42 | **Módulo WS** | 2016-10-03 → 2016-10-07 (+4d) | 2016-10-03 → 2016-10-14 (+11d) | 1d? → 4d |  | 0d → 1d | none → 36 |  |
| 43 | Diagramar clases | 2016-10-03 → 2016-10-11 (+8d) | 2016-10-03 → 2016-10-11 (+8d) | 1d? → 1d |  | none → 1d |  |  |
| 44 | Diagramar secuencias | 2016-10-03 → 2016-10-12 (+9d) | 2016-10-03 → 2016-10-13 (+10d) | 1d? → 2d |  | none → 1d | none → 43 |  |
| 45 | Elaborar casos prueba | 2016-10-03 → 2016-10-14 (+11d) | 2016-10-03 → 2016-10-14 (+11d) | 1d? → 1d |  | none → 1d | none → 44 |  |
| 46 | Entregar documentación WS | 2016-10-03 → 2016-10-07 (+4d) | 2016-10-03 → 2016-10-07 (+4d) | 1d? → 0d |  | none → 5d |  |  |
| 47 | **Aplicación Web** | 2016-10-03 → 2016-10-11 (+8d) | 2016-10-03 → 2016-10-14 (+11d) | 1d? → 4d |  |  | none → 36 |  |
| 48 | Diagramar clases | 2016-10-03 → 2016-10-11 (+8d) | 2016-10-03 → 2016-10-11 (+8d) | 1d? → 1d |  | none → 0d |  |  |
| 49 | Diagramar secuencias | 2016-10-03 → 2016-10-12 (+9d) | 2016-10-03 → 2016-10-13 (+10d) | 1d? → 2d |  | none → 0d | none → 48 |  |
| 50 | Elaborar casos prueba | 2016-10-03 → 2016-10-14 (+11d) | 2016-10-03 → 2016-10-14 (+11d) | 1d? → 1d |  | none → 0d | none → 49 |  |
| 51 | Entregar documentación aplicación web | 2016-10-03 → 2016-10-14 (+11d) | 2016-10-03 → 2016-10-14 (+11d) | 1d? → 0d |  | none → 0d | none → 50 |  |
| 52 | **Website** | 2016-10-03 → 2016-10-17 (+14d) | 2016-10-03 → 2016-10-21 (+18d) | 1d? → 5d |  | 0d → 1d | none → 42 |  |
| 53 | Diagramar clases | 2016-10-03 → 2016-10-17 (+14d) | 2016-10-03 → 2016-10-17 (+14d) | 1d? → 1d |  | none → 1d |  |  |
| 54 | Diagramar secuencias | 2016-10-03 → 2016-10-18 (+15d) | 2016-10-03 → 2016-10-20 (+17d) | 1d? → 3d |  | none → 1d | none → 53 |  |
| 55 | Elaborar casos prueba | 2016-10-03 → 2016-10-21 (+18d) | 2016-10-03 → 2016-10-21 (+18d) | 1d? → 1d |  | none → 1d | none → 54 |  |
| 56 | Elaborar bocetos Website | 2016-10-03 → 2016-10-21 (+18d) | 2016-10-03 → 2016-10-21 (+18d) | 1d? → 1d |  | none → 1d | none → 54 |  |
| 57 | Entregar documentación Website | 2016-10-03 → 2016-10-21 (+18d) | 2016-10-03 → 2016-10-21 (+18d) | 1d? → 0d |  | none → 1d | none → 55, 56 |  |
| 58 | **Terminal** | 2016-10-03 → 2016-10-17 (+14d) | 2016-10-03 → 2016-10-28 (+25d) | 1d → 10d |  |  | none → 47 |  |
| 59 | Diagramar clases | 2016-10-03 → 2016-10-17 (+14d) | 2016-10-03 → 2016-10-18 (+15d) | 1d → 2d |  | none → 0d |  |  |
| 60 | Diagramar secuencias | 2016-10-03 → 2016-10-19 (+16d) | 2016-10-03 → 2016-10-25 (+22d) | 1d → 5d |  | none → 0d | none → 59 |  |
| 61 | Elaborar casos prueba | 2016-10-03 → 2016-10-26 (+23d) | 2016-10-03 → 2016-10-27 (+24d) | 1d → 2d |  | none → 1d | none → 60 |  |
| 62 | Elaborar bocetos Website | 2016-10-03 → 2016-10-26 (+23d) | 2016-10-03 → 2016-10-28 (+25d) | 1d → 3d |  | none → 0d | none → 60 |  |
| 63 | Entregar documentación Website | 2016-10-03 → 2016-10-28 (+25d) | 2016-10-03 → 2016-10-28 (+25d) | 1d → 0d |  | none → 0d | none → 61, 62 |  |
| 64 | **WS Aseguradora** | 2016-10-03 → 2016-10-24 (+21d) | 2016-10-03 → 2016-10-27 (+24d) | 1d? → 4d |  | 0d → 1d | none → 52 |  |
| 65 | Diagramar clases | 2016-10-03 → 2016-10-24 (+21d) | 2016-10-03 → 2016-10-24 (+21d) | 1d? → 1d |  | none → 1d |  |  |
| 66 | Diagramar secuencias | 2016-10-03 → 2016-10-25 (+22d) | 2016-10-03 → 2016-10-26 (+23d) | 1d? → 2d |  | none → 1d | none → 65 |  |
| 67 | Elaborar casos de prueba | 2016-10-03 → 2016-10-27 (+24d) | 2016-10-03 → 2016-10-27 (+24d) | 1d? → 1d |  | none → 1d | none → 66 |  |
| 68 | Elaborar modelo de datos | 2016-10-03 → 2016-10-27 (+24d) | 2016-10-03 → 2016-10-27 (+24d) | 1d? → 1d |  | none → 1d | none → 66 |  |
| 69 | Entregar documentación WS Aseguradora | 2016-10-03 → 2016-10-27 (+24d) | 2016-10-03 → 2016-10-27 (+24d) | 1d? → 0d |  | none → 1d | none → 67, 68 |  |
| 70 | Entregar diseño del sistema | 2016-10-03 → 2016-10-30 (+27d) | 2016-10-03 → 2016-10-30 (+27d) | 1d? → 0d |  |  |  | constraint none → start no earlier than 2016-10-30 |
| 71 | **Iteración 3: Construcción del sistema** | 2016-10-03 → 2016-10-30 (+27d) | 2016-10-03 → 2016-11-20 (+48d) | 1d? → 13d |  |  | none → 29 |  |
| 72 | **Script BD CMH** | 2016-10-03 → 2016-10-30 (+27d) | 2016-10-03 → 2016-11-02 (+30d) | 1d? → 1d |  | 0d → 1d |  |  |
| 73 | Construcción script BD CMH | 2016-10-03 → 2016-11-02 (+30d) | 2016-10-03 → 2016-11-02 (+30d) | 1d? → 1d |  | none → 1d |  |  |

| ID | Task | Start | Finish | Duration | Total float | Predecessors | Other |
| --- | --- | --- | --- | --- | --- | --- | --- |
| 74 | Entrega script BD CMH | 2016-10-03 → 2016-10-30 (+27d) | 2016-10-03 → 2016-10-30 (+27d) | 1d? → 0d | none → 2d |  |  |
| 75 | **Módulo WS** | 2016-10-03 → 2016-11-02 (+30d) | 2016-10-03 → 2016-11-04 (+32d) | 1d? → 2d | 0d → 1d | none → 72 |  |
| 76 | Construcción WS | 2016-10-03 → 2016-11-03 (+31d) | 2016-10-03 → 2016-11-04 (+32d) | 1d? → 2d | none → 1d |  |  |
| 77 | Entrega WS | 2016-10-03 → 2016-11-02 (+30d) | 2016-10-03 → 2016-11-02 (+30d) | 1d? → 0d | none → 3d |  |  |
| 78 | **Aplicación Web** | 2016-10-03 → 2016-11-04 (+32d) | 2016-10-03 → 2016-11-08 (+36d) | 1d? → 2d | 0d → 1d | none → 75 |  |
| 79 | Construcción web | 2016-10-03 → 2016-11-07 (+35d) | 2016-10-03 → 2016-11-08 (+36d) | 1d? → 2d | none → 1d |  |  |
| 80 | Entrega módulo web | 2016-10-03 → 2016-11-04 (+32d) | 2016-10-03 → 2016-11-04 (+32d) | 1d? → 0d | none → 3d |  |  |
| 81 | **Website** | 2016-10-03 → 2016-11-08 (+36d) | 2016-10-03 → 2016-11-11 (+39d) | 1d? → 3d | 0d → 1d | none → 78 |  |
| 82 | Construcción módulo Website | 2016-10-03 → 2016-11-09 (+37d) | 2016-10-03 → 2016-11-11 (+39d) | 1d? → 3d | none → 1d |  |  |
| 83 | Entrega módulo Website | 2016-10-03 → 2016-11-08 (+36d) | 2016-10-03 → 2016-11-08 (+36d) | 1d? → 0d | none → 4d |  |  |
| 84 | **Terminal** | 2016-10-03 → 2016-10-30 (+27d) | 2016-10-03 → 2016-11-11 (+39d) | 1d? → 8d |  |  |  |
| 85 | Construcción módulo terminal | 2016-10-03 → 2016-11-02 (+30d) | 2016-10-03 → 2016-11-11 (+39d) | 1d? → 8d | none → 0d |  |  |
| 86 | Entrega módulo terminal | 2016-10-03 → 2016-10-30 (+27d) | 2016-10-03 → 2016-10-30 (+27d) | 1d? → 0d | none → 8d |  |  |
| 87 | **WS Aseguradora** | 2016-10-03 → 2016-11-11 (+39d) | 2016-10-03 → 2016-11-15 (+43d) | 1d? → 2d |  | none → 84 |  |
| 88 | Construcción script BD CMH | 2016-10-03 → 2016-11-14 (+42d) | 2016-10-03 → 2016-11-14 (+42d) | 1d? → 1d | none → 1d |  |  |
| 89 | Construcción módulo aseguradora | 2016-10-03 → 2016-11-14 (+42d) | 2016-10-03 → 2016-11-15 (+43d) | 1d? → 2d | none → 0d |  |  |
| 90 | Entrega script BD WS Aseguradora | 2016-10-03 → 2016-11-11 (+39d) | 2016-10-03 → 2016-11-11 (+39d) | 1d? → 0d | none → 2d |  |  |
| 91 | Entrega módulo WS Aseguradora | 2016-10-03 → 2016-11-11 (+39d) | 2016-10-03 → 2016-11-11 (+39d) | 1d? → 0d | none → 2d |  |  |
| 96 | Entrega del sistema | 2016-10-03 → 2016-11-20 (+48d) | 2016-10-03 → 2016-11-20 (+48d) | 1d? → 0d | none → 0d |  | constraint none → start no earlier than 2016-11-20 |

## Version 3 (saved 2016-10-04)

Note of the change: Reorganización fechas

Last finish stays 2016-11-20. Complete tasks 24 → 25.

Added:

| ID | Task | Duration | Start | Finish | Predecessors | Resources |
| --- | --- | --- | --- | --- | --- | --- |
| 42 | Diseño vistas y procedimientos almacenados | 1d | 2016-10-13 | 2016-10-13 | 41 | Fabián Jaque; Pablo de la Sotta |
| 46 | **Construcción Core** | 1d | 2016-09-25 | 2016-09-26 |  |  |
| 47 | Módulo acceso a core | 1d | 2016-09-26 | 2016-09-26 |  |  |
| 48 | Módulo reglas de negocio | 1d | 2016-09-26 | 2016-09-26 |  |  |
| 49 | Construcción vistas y procedimientos almacenados | 1d | 2016-09-26 | 2016-09-26 |  |  |
| 50 | Entrega módulo core | 0d | 2016-09-25 | 2016-09-25 |  |  |
| 55 | Bocetos aplicación | 1d | 2016-10-11 A | 2016-10-17 | 53 |  |

Removed: 39 Elaborar especificación procedimiento almacenado; 41 Entregar especificación de procedimiento almacenado; 52 Website; 53 Diagramar clases; 54 Diagramar secuencias; 55 Elaborar casos prueba; 56 Elaborar bocetos Website; 57 Entregar documentación Website

Changed:

| ID | Task | Start | Finish | Duration | Complete | Total float | Predecessors | Other |
| --- | --- | --- | --- | --- | --- | --- | --- | --- |
| 29 | **Iteración 2: Diseño del sistema** | 2016-09-26 A → 2016-09-25 A (-1d) |  |  | 18% → 24% |  |  |  |
| 30 | **Arquitectura** |  |  |  | 80% → 90% | 0d → 17d |  |  |
| 34 | Elaborar diagrama de despliegue |  | 2016-09-30 A |  | 50% → 100% | 2d → none |  |  |
| 36 | **Modelo de datos** | 2016-10-05 A |  |  | 0% → 50% |  | 30 → none | was named Modelo de datos CMH |
| 37 | Elaborar modelo de datos | 2016-10-05 A |  |  | 0% → 75% |  | none → 34 |  |
| 40 | **Módulo Core** | 2016-10-07 → 2016-10-11 (+4d) | 2016-10-14 → 2016-10-17 (+3d) | 4d → 5d |  | 1d → 9d |  | was named Módulo WS |
| 41 | Diagramar clases |  | 2016-10-11 → 2016-10-12 (+1d) | 1d → 2d |  | 1d → 9d |  | resources none → Elías Baeza; Fabián Jaque; Gonzalo López; Pablo de la Sotta; Tomás Muñiz |
| 43 | Diagramar secuencias | 2016-10-12 → 2016-10-13 (+1d) | 2016-10-13 → 2016-10-17 (+4d) | 2d → 3d |  | 1d → 9d |  | resources none → Elías Baeza; Gonzalo López; Tomás Muñiz |
| 44 | Elaborar casos prueba |  | 2016-10-14 → 2016-10-17 (+3d) | 1d → 2d |  | 1d → 9d | 43 → 42 | resources none → Fabián Jaque; Pablo de la Sotta |
| 45 | Entregar documentación WS | 2016-10-07 → 2016-10-17 (+10d) | 2016-10-07 → 2016-10-17 (+10d) |  |  | 5d → 9d | none → 43, 44 |  |
| 51 | **Aplicación Web** | 2016-10-11 A | 2016-10-14 → 2016-10-17 (+3d) | 4d → 5d | 0% → 13% | 0d → 9d |  |  |
| 53 | Diagramar secuencias |  | 2016-10-13 → 2016-10-14 (+1d) | 2d → 3d |  |  |  |  |
| 54 | Elaborar casos prueba | 2016-10-14 → 2016-10-17 (+3d) | 2016-10-14 → 2016-10-17 (+3d) |  |  | 0d → 9d |  |  |
| 56 | Entregar documentación aplicación web | 2016-10-14 → 2016-10-17 (+3d) | 2016-10-14 → 2016-10-17 (+3d) |  |  | 0d → 9d |  |  |
| 57 | **Terminal** | 2016-10-17 → 2016-10-11 (-6d) | 2016-10-28 → 2016-10-21 (-7d) | 10d → 9d |  | 0d → 5d | 51 → 36 |  |
| 58 | Diagramar clases | 2016-10-17 → 2016-10-11 (-6d) | 2016-10-18 → 2016-10-12 (-6d) |  |  | 0d → 5d |  |  |
| 59 | Diagramar secuencias | 2016-10-19 → 2016-10-13 (-6d) | 2016-10-25 → 2016-10-19 (-6d) |  |  | 0d → 5d |  |  |
| 60 | Elaborar casos prueba | 2016-10-26 → 2016-10-20 (-6d) | 2016-10-27 → 2016-10-21 (-6d) |  |  | 1d → 5d |  |  |
| 61 | Bocetos terminal | 2016-10-26 → 2016-10-20 (-6d) | 2016-10-28 → 2016-10-21 (-7d) | 3d → 2d |  | 0d → 5d |  | was named Elaborar bocetos Website |
| 62 | Entregar documentación Website | 2016-10-28 → 2016-10-21 (-7d) | 2016-10-28 → 2016-10-21 (-7d) |  |  | 0d → 5d |  |  |
| 63 | **WS Aseguradora** | 2016-10-24 → 2016-09-26 (-28d) | 2016-10-27 → 2016-09-29 (-28d) |  |  | 1d → 20d | Website → none |  |
| 64 | Diagramar clases | 2016-10-24 → 2016-09-26 (-28d) | 2016-10-24 → 2016-09-26 (-28d) |  |  | 1d → 20d |  |  |
| 65 | Diagramar secuencias | 2016-10-25 → 2016-09-27 (-28d) | 2016-10-26 → 2016-09-28 (-28d) |  |  | 1d → 20d |  |  |
| 66 | Elaborar casos de prueba | 2016-10-27 → 2016-09-29 (-28d) | 2016-10-27 → 2016-09-29 (-28d) |  |  | 1d → 20d |  |  |
| 67 | Elaborar modelo de datos | 2016-10-27 → 2016-09-29 (-28d) | 2016-10-27 → 2016-09-29 (-28d) |  |  | 1d → 20d |  |  |
| 68 | Entregar documentación WS Aseguradora | 2016-10-27 → 2016-09-29 (-28d) | 2016-10-27 → 2016-09-29 (-28d) |  |  | 1d → 20d |  |  |
| 74 | **Módulo Core** |  |  |  |  |  |  | was named Módulo WS |

## Version 4 (saved 2016-10-05)

Note of the change: Merged branch dev into dev

Last finish 2016-11-20 → 2016-11-24 (+4d). Complete tasks 25 → 27.

Removed: 74 Módulo Core; 75 Construcción WS; 76 Entrega WS; 80 Website; 81 Construcción módulo Website; 82 Entrega módulo Website

Changed:

| ID | Task | Start | Finish | Duration | Complete | Total float | Predecessors | Other |
| --- | --- | --- | --- | --- | --- | --- | --- | --- |
| 29 | **Iteración 2: Diseño del sistema** | 2016-09-25 A → 2016-09-26 A (+1d) | 2016-10-30 → 2016-11-07 (+8d) | 24d → 28d | 24% → 29% |  |  |  |
| 30 | **Arquitectura** |  |  |  | 90% → 99% | 17d → 21d |  |  |
| 33 | Elaborar especificación de casos de uso |  | 2016-10-04 A |  | 75% → 100% | 17d → none |  |  |
| 36 | **Modelo de datos** | 2016-10-05 A → 2016-10-03 A (-2d) | 2016-10-07 → 2016-10-06 (-1d) | 3d → 4d | 50% → 75% |  |  |  |
| 37 | Elaborar modelo de datos | 2016-10-05 A → 2016-10-03 A (-2d) | 2016-10-06 → 2016-10-05 A (-1d) | 2d → 3d | 75% → 100% | 0d → none | 34 → none |  |
| 38 | Elaborar diccionario de datos | 2016-10-07 → 2016-10-06 (-1d) | 2016-10-07 → 2016-10-06 (-1d) |  |  |  |  |  |
| 39 | Entregar modelo de datos | 2016-10-07 → 2016-10-06 (-1d) | 2016-10-07 → 2016-10-06 (-1d) |  |  |  |  |  |
| 40 | **Módulo Core** | 2016-10-11 → 2016-10-07 (-4d) | 2016-10-17 → 2016-10-14 (-3d) |  |  | 9d → 0d |  |  |
| 41 | Diagramar clases | 2016-10-11 → 2016-10-07 (-4d) | 2016-10-12 → 2016-10-11 (-1d) |  |  | 9d → 0d |  |  |
| 42 | Diseño vistas y procedimientos almacenados | 2016-10-13 → 2016-10-12 (-1d) | 2016-10-13 → 2016-10-12 (-1d) |  |  | 9d → 0d |  |  |
| 43 | Diagramar secuencias | 2016-10-13 → 2016-10-12 (-1d) | 2016-10-17 → 2016-10-14 (-3d) |  |  | 9d → 0d |  |  |
| 44 | Elaborar casos prueba | 2016-10-14 → 2016-10-13 (-1d) | 2016-10-17 → 2016-10-14 (-3d) |  |  | 9d → 0d |  |  |
| 45 | Entregar documentación WS | 2016-10-17 → 2016-10-14 (-3d) | 2016-10-17 → 2016-10-14 (-3d) |  |  | 9d → 0d |  |  |
| 46 | **Construcción Core** | 2016-09-25 → 2016-10-14 (+19d) | 2016-09-26 → 2016-10-17 (+21d) |  |  | 23d → 0d | none → 40 |  |
| 47 | Módulo acceso a core | 2016-09-26 → 2016-10-17 (+21d) | 2016-09-26 → 2016-10-17 (+21d) |  |  | 23d → 0d |  |  |
| 48 | Módulo reglas de negocio | 2016-09-26 → 2016-10-17 (+21d) | 2016-09-26 → 2016-10-17 (+21d) |  |  | 23d → 0d |  |  |
| 49 | Construcción vistas y procedimientos almacenados | 2016-09-26 → 2016-10-17 (+21d) | 2016-09-26 → 2016-10-17 (+21d) |  |  | 23d → 0d |  |  |
| 50 | Entrega módulo core | 2016-09-25 → 2016-10-14 (+19d) | 2016-09-25 → 2016-10-14 (+19d) |  |  | 24d → 1d |  |  |
| 51 | **Aplicación Web** | 2016-10-11 A → 2016-10-07 A (-4d) | 2016-10-17 → 2016-10-14 (-3d) |  |  | 9d → 14d |  |  |
| 52 | Diagramar clases | 2016-10-11 → 2016-10-07 (-4d) | 2016-10-11 → 2016-10-07 (-4d) |  |  |  |  |  |
| 53 | Diagramar secuencias | 2016-10-12 → 2016-10-11 (-1d) | 2016-10-14 → 2016-10-13 (-1d) |  |  |  |  |  |
| 54 | Elaborar casos prueba | 2016-10-17 → 2016-10-14 (-3d) | 2016-10-17 → 2016-10-14 (-3d) |  |  | 9d → 14d |  |  |
| 55 | Bocetos aplicación |  | 2016-10-17 → 2016-10-14 (-3d) |  |  | 9.75d → 14.75d |  |  |
| 56 | Entregar documentación aplicación web | 2016-10-17 → 2016-10-14 (-3d) | 2016-10-17 → 2016-10-14 (-3d) |  |  | 9d → 14d |  |  |
| 57 | **Terminal** | 2016-10-11 → 2016-10-18 (+7d) | 2016-10-21 → 2016-10-28 (+7d) |  |  | 5d → 0d | 36 → 46 |  |
| 58 | Diagramar clases | 2016-10-11 → 2016-10-18 (+7d) | 2016-10-12 → 2016-10-19 (+7d) |  |  | 5d → 0d |  |  |
| 59 | Diagramar secuencias | 2016-10-13 → 2016-10-20 (+7d) | 2016-10-19 → 2016-10-26 (+7d) |  |  | 5d → 0d |  |  |
| 60 | Elaborar casos prueba | 2016-10-20 → 2016-10-27 (+7d) | 2016-10-21 → 2016-10-28 (+7d) |  |  | 5d → 0d |  |  |
| 61 | Bocetos terminal | 2016-10-20 → 2016-10-27 (+7d) | 2016-10-21 → 2016-10-28 (+7d) |  |  | 5d → 0d |  |  |
| 62 | Entregar documentación Website | 2016-10-21 → 2016-10-28 (+7d) | 2016-10-21 → 2016-10-28 (+7d) |  |  | 5d → 0d |  |  |
| 63 | **WS Aseguradora** | 2016-09-26 → 2016-11-02 (+37d) | 2016-09-29 → 2016-11-07 (+39d) |  |  | 20d → 0d | none → 57 |  |
| 64 | Diagramar clases | 2016-09-26 → 2016-11-02 (+37d) | 2016-09-26 → 2016-11-02 (+37d) |  |  | 20d → 0d |  |  |
| 65 | Diagramar secuencias | 2016-09-27 → 2016-11-03 (+37d) | 2016-09-28 → 2016-11-04 (+37d) |  |  | 20d → 0d |  |  |
| 66 | Elaborar casos de prueba | 2016-09-29 → 2016-11-07 (+39d) | 2016-09-29 → 2016-11-07 (+39d) |  |  | 20d → 0d |  |  |
| 67 | Elaborar modelo de datos | 2016-09-29 → 2016-11-07 (+39d) | 2016-09-29 → 2016-11-07 (+39d) |  |  | 20d → 0d |  |  |
| 68 | Entregar documentación WS Aseguradora | 2016-09-29 → 2016-11-07 (+39d) | 2016-09-29 → 2016-11-07 (+39d) |  |  | 20d → 0d |  |  |
| 70 | **Iteración 3: Construcción del sistema** | 2016-10-30 → 2016-11-07 (+8d) | 2016-11-20 → 2016-11-24 (+4d) |  |  |  |  |  |
| 71 | **Script BD** | 2016-10-30 → 2016-11-07 (+8d) | 2016-11-02 → 2016-11-08 (+6d) |  |  | 1d → 12d |  | was named Script BD CMH |
| 72 | Construcción script BD CMH | 2016-11-02 → 2016-11-08 (+6d) | 2016-11-02 → 2016-11-08 (+6d) |  |  | 1d → 12d |  |  |
| 73 | Entrega script BD CMH | 2016-10-30 → 2016-11-07 (+8d) | 2016-10-30 → 2016-11-07 (+8d) |  |  | 2d → 13d |  |  |
| 74 | **Aplicación Web** | 2016-11-04 → 2016-11-07 (+3d) | 2016-11-08 → 2016-11-09 (+1d) |  |  | 1d → 11d | Módulo Core → none |  |
| 75 | Construcción web | 2016-11-07 → 2016-11-08 (+1d) | 2016-11-08 → 2016-11-09 (+1d) |  |  | 1d → 11d |  |  |
| 76 | Entrega módulo web | 2016-11-04 → 2016-11-07 (+3d) | 2016-11-04 → 2016-11-07 (+3d) |  |  | 3d → 13d |  |  |
| 77 | **Terminal** | 2016-10-30 → 2016-11-07 (+8d) | 2016-11-11 → 2016-11-17 (+6d) |  |  |  |  |  |
| 78 | Construcción módulo terminal | 2016-11-02 → 2016-11-08 (+6d) | 2016-11-11 → 2016-11-17 (+6d) |  |  |  |  |  |
| 79 | Entrega módulo terminal | 2016-10-30 → 2016-11-07 (+8d) | 2016-10-30 → 2016-11-07 (+8d) |  |  |  |  |  |
| 80 | **WS Aseguradora** | 2016-11-11 → 2016-11-17 (+6d) | 2016-11-15 → 2016-11-21 (+6d) |  |  |  |  |  |
| 81 | Construcción script BD CMH | 2016-11-14 → 2016-11-18 (+4d) | 2016-11-14 → 2016-11-18 (+4d) |  |  |  |  |  |
| 82 | Construcción módulo aseguradora | 2016-11-14 → 2016-11-18 (+4d) | 2016-11-15 → 2016-11-21 (+6d) |  |  |  |  |  |
| 83 | Entrega script BD WS Aseguradora | 2016-11-11 → 2016-11-17 (+6d) | 2016-11-11 → 2016-11-17 (+6d) |  |  |  |  |  |
| 84 | Entrega módulo WS Aseguradora | 2016-11-11 → 2016-11-17 (+6d) | 2016-11-11 → 2016-11-17 (+6d) |  |  |  |  |  |
| 85 | **Pruebas de calidad** | 2016-11-14 → 2016-11-08 (-6d) | 2016-11-18 → 2016-11-24 (+6d) | 5d → 13d |  |  |  |  |
| 86 | Pruebas unitarias | 2016-11-14 → 2016-11-08 (-6d) | 2016-11-17 → 2016-11-11 (-6d) |  |  | 1d → 9d | Website → none |  |
| 87 | Pruebas de integración | 2016-11-16 → 2016-11-22 (+6d) | 2016-11-17 → 2016-11-23 (+6d) |  |  |  |  |  |
| 88 | Pruebas de aceptación | 2016-11-18 → 2016-11-24 (+6d) | 2016-11-18 → 2016-11-24 (+6d) |  |  |  |  |  |

## Version 5 (saved 2016-10-16)

Note of the change: Merge remote-tracking branch 'refs/remotes/origin/dev' into net-implementar-bl

Last finish 2016-11-24 → 2016-11-20 (-4d). Complete tasks 27 → 33.

Added:

| ID | Task | Duration | Start | Finish | Predecessors | Resources |
| --- | --- | --- | --- | --- | --- | --- |
| 36 | **Documentación** | 17d | 2016-09-26 A | 2016-10-19 |  |  |
| 37 | Matriz de trazabilidad: Requerimientos vs casos de uso | 1d | 2016-09-26 A | 2016-09-26 A |  | Tomás Muñiz |
| 38 | Matriz de trazabilidad: Requerimientos vs clases | 1d | 2016-10-19 | 2016-10-19 | 46 | Elías Baeza |
| 42 | Poblar base de datos | 3d | 2016-10-13 A | 2016-10-17 | 41 | Gonzalo López |
| 43 | Diseñar procedimiento almacenado | 1d | 2016-10-18 | 2016-10-18 | 42 |  |
| 48 | Construir capa de negocio | 3d | 2016-10-19 A | 2016-10-21 | 46 | Tomás Muñiz [50%] |
| 53 | Construir capa de negocio | 5d | 2016-10-21 | 2016-10-27 | 51 | Fabián Jaque [50%] |
| 55 | **Servicio de pago** | 3d | 2016-10-24 A | 2016-10-26 | 45 |  |
| 57 | Elaborar plan de pruebas | 2d | 2016-10-25 | 2016-10-26 | 56 |  |
| 58 | Construir capa de negocio | 2d | 2016-10-25 | 2016-10-26 | 56 |  |
| 59 | Entregar sistema de pagos | 0d | 2016-10-26 | 2016-10-26 | 57, 58 |  |
| 64 | Construir capa de negocio | 2d | 2016-11-03 | 2016-11-04 | 62 |  |
| 69 | Implementación procedimiento almacenado | 1d | 2016-11-07 | 2016-11-07 |  |  |

Removed: 40 Módulo Core; 42 Diseño vistas y procedimientos almacenados; 43 Diagramar secuencias; 44 Elaborar casos prueba; 45 Entregar documentación WS; 46 Construcción Core; 47 Módulo acceso a core; 48 Módulo reglas de negocio; 49 Construcción vistas y procedimientos almacenados; 50 Entrega módulo core; 53 Diagramar secuencias; 55 Bocetos aplicación; 59 Diagramar secuencias; 61 Bocetos terminal; 65 Diagramar secuencias; 80 WS Aseguradora; 81 Construcción script BD CMH; 82 Construcción módulo aseguradora; 83 Entrega script BD WS Aseguradora; 84 Entrega módulo WS Aseguradora; 86 Pruebas unitarias

Changed:

| ID | Task | Start | Finish | Duration | Complete | Total float | Predecessors | Other |
| --- | --- | --- | --- | --- | --- | --- | --- | --- |
| 29 | **Iteración 2: Diseño del sistema** |  | 2016-11-07 → 2016-11-04 (-3d) | 28d → 27d | 29% → 50% |  |  |  |
| 39 | **Modelo de datos** |  | 2016-10-06 → 2016-10-18 (+12d) | 4d → 11d | 75% → 84% | 0d → -1d |  |  |
| 40 | Elaborar modelo de datos |  | 2016-10-05 A → 2016-10-07 A (+2d) | 3d → 5d |  |  |  |  |
| 41 | Elaborar diccionario de datos | 2016-10-06 → 2016-10-11 A (+5d) | 2016-10-06 → 2016-10-12 A (+6d) | 1d → 2d | 0% → 100% | 0d → none |  | resources none → Gonzalo López |
| 44 | Entregar modelo de datos | 2016-10-06 → 2016-10-18 (+12d) | 2016-10-06 → 2016-10-18 (+12d) |  |  | 0d → -1d | 41 → 43 |  |
| 45 | **Aplicación Web** | 2016-10-07 A → 2016-10-18 A (+11d) | 2016-10-14 → 2016-10-21 (+7d) | 5d → 4d | 13% → 36% | 14d → 0d |  |  |
| 46 | Diagramar clases | 2016-10-07 → 2016-10-18 A (+11d) | 2016-10-07 → 2016-10-18 A (+11d) |  | 0% → 100% | 0d → none |  | resources none → Pablo de la Sotta |
| 47 | Elaborar casos prueba | 2016-10-14 → 2016-10-19 A (+5d) | 2016-10-14 → 2016-10-21 (+7d) | 1d → 3d | 0% → 25% | 14d → 0d | Diagramar secuencias → 46 | resources none → Tomás Muñiz [50%] |
| 49 | Entregar documentación aplicación web | 2016-10-14 → 2016-10-21 (+7d) | 2016-10-14 → 2016-10-21 (+7d) |  |  | 14d → 0d | 47 → 47, 48 |  |
| 50 | **Terminal** | 2016-10-18 → 2016-10-19 A (+1d) | 2016-10-28 → 2016-10-27 (-1d) | 9d → 7d | 0% → 17% |  | Construcción Core → 39 |  |
| 51 | Diagramar clases | 2016-10-18 → 2016-10-19 A (+1d) | 2016-10-19 → 2016-10-20 A (+1d) |  | 0% → 100% | 0d → none | none → 46 | resources none → Pablo de la Sotta |
| 52 | Elaborar casos prueba | 2016-10-27 → 2016-10-21 (-6d) | 2016-10-28 → 2016-10-27 (-1d) | 2d → 5d |  |  | Diagramar secuencias → 51 | resources none → Fabián Jaque [50%] |
| 54 | Entregar documentación Website | 2016-10-28 → 2016-10-27 (-1d) | 2016-10-28 → 2016-10-27 (-1d) |  |  |  | 52, Bocetos terminal → 52, 53 |  |
| 56 | Diagramar clases | 2016-10-07 → 2016-10-24 A (+17d) | 2016-10-11 → 2016-10-24 A (+13d) | 2d → 1d | 0% → 100% | 0d → none |  | resources Elías Baeza; Fabián Jaque; Gonzalo López; Pablo de la Sotta; Tomás Muñiz → Pablo de la Sotta |
| 60 | **WS Aseguradora** | 2016-11-02 → 2016-10-28 A (-5d) | 2016-11-07 → 2016-11-04 (-3d) |  | 0% → 17% |  |  |  |
| 61 | Elaborar modelo de datos | 2016-11-07 → 2016-10-28 A (-10d) | 2016-11-07 → 2016-10-28 A (-10d) |  | 0% → 100% | 0d → none | Diagramar secuencias → none | resources none → Pablo de la Sotta |
| 62 | Diagramar clases |  |  |  |  |  | none → 61 | resources none → Pablo de la Sotta |
| 63 | Elaborar casos de prueba | 2016-11-07 → 2016-11-03 (-4d) | 2016-11-07 → 2016-11-04 (-3d) | 1d → 2d |  |  | Diagramar secuencias → 62 |  |
| 65 | Entregar documentación WS Aseguradora | 2016-11-07 → 2016-11-04 (-3d) | 2016-11-07 → 2016-11-04 (-3d) |  |  |  | 63, 61 → 63, 64 |  |
| 67 | **Iteración 3: Construcción del sistema** | 2016-11-07 → 2016-11-04 (-3d) | 2016-11-24 → 2016-11-20 (-4d) | 13d → 10d |  |  |  |  |
| 68 | **Script BD** | 2016-11-07 → 2016-11-04 (-3d) |  | 1d → 2d |  | 12d → 8d |  |  |
| 70 | Construcción BD final |  |  |  |  | 12d → 8d | none → 69 | was named Construcción script BD CMH |
| 71 | Entrega script BD CMH | 2016-11-07 → 2016-11-04 (-3d) | 2016-11-07 → 2016-11-04 (-3d) |  |  | 13d → 10d |  |  |
| 72 | **Aplicación Web** | 2016-11-07 → 2016-11-04 (-3d) | 2016-11-09 → 2016-11-11 (+2d) | 2d → 5d |  | 11d → 2d |  |  |
| 73 | Construcción vistas | 2016-11-08 → 2016-11-07 (-1d) | 2016-11-09 → 2016-11-11 (+2d) | 2d → 5d |  | 11d → 2d |  | was named Construcción web |
| 74 | Entrega módulo web | 2016-11-07 → 2016-11-04 (-3d) | 2016-11-07 → 2016-11-04 (-3d) |  |  | 13d → 7d |  |  |
| 75 | **Terminal** | 2016-11-07 → 2016-11-04 (-3d) | 2016-11-17 → 2016-11-15 (-2d) | 8d → 7d |  |  |  |  |
| 76 | Construcción vistas | 2016-11-08 → 2016-11-07 (-1d) | 2016-11-17 → 2016-11-15 (-2d) | 8d → 7d |  |  |  | was named Construcción módulo terminal |
| 77 | Entrega módulo terminal | 2016-11-07 → 2016-11-04 (-3d) | 2016-11-07 → 2016-11-04 (-3d) |  |  | 8d → 7d |  |  |
| 78 | **Pruebas de calidad** | 2016-11-08 → 2016-11-16 (+8d) | 2016-11-24 → 2016-11-18 (-6d) | 13d → 3d |  |  | none → 72, 75 |  |
| 79 | Pruebas de integración | 2016-11-22 → 2016-11-16 (-6d) | 2016-11-23 → 2016-11-17 (-6d) |  |  |  | 75, WS Aseguradora → 75 |  |
| 80 | Pruebas de aceptación | 2016-11-24 → 2016-11-18 (-6d) | 2016-11-24 → 2016-11-18 (-6d) |  |  |  |  |  |

## Version 6 (saved 2016-10-20)

Note of the change: Merge 383f2ad779439e8de9021ab143b2941ce03de08b into 505eb2323ae73c27c890e2bdcfe03cc9989a4fbe

Last finish stays 2016-11-20. Complete tasks 33 → 35.

Removed: 43 Diseñar procedimiento almacenado; 69 Implementación procedimiento almacenado

Changed:

| ID | Task | Start | Finish | Duration | Complete | Total float | Predecessors | Other |
| --- | --- | --- | --- | --- | --- | --- | --- | --- |
| 29 | **Iteración 2: Diseño del sistema** | 2016-09-26 A → 2016-09-25 A (-1d) | 2016-11-04 → 2016-10-30 (-5d) | 27d → 24d | 50% → 60% | 0d → 3d |  |  |
| 36 | **Documentación** |  | 2016-10-19 A |  | 50% → 100% | 10d → none |  |  |
| 38 | Matriz de trazabilidad: Requerimientos vs clases | 2016-10-19 A | 2016-10-19 A |  | 0% → 100% | 10d → none |  |  |
| 39 | **Modelo de datos** | 2016-10-03 A → 2016-09-25 A (-8d) | 2016-10-18 → 2016-10-17 (-1d) | 11d → 15d | 84% → 99% | -1d → 0d |  |  |
| 42 | Poblar base de datos |  | 2016-10-17 A |  | 75% → 100% | -1d → none |  |  |
| 43 | Entregar modelo de datos | 2016-10-18 → 2016-09-25 (-23d) | 2016-10-18 → 2016-09-25 (-23d) |  |  | -1d → 15d | Diseñar procedimiento almacenado → none |  |
| 49 | **Terminal** |  |  |  | 17% → 38% | 0d → 4d |  |  |
| 51 | Elaborar casos prueba | 2016-10-21 A |  |  | 0% → 25% | 0d → 4d |  |  |
| 52 | Construir capa de negocio | 2016-10-21 A |  |  | 0% → 25% | 0d → 4d |  |  |
| 53 | Entregar documentación terminal |  |  |  |  | 0d → 4d |  | was named Entregar documentación Website |
| 59 | **WS Aseguradora** | 2016-10-28 A → 2016-10-24 A (-4d) | 2016-11-04 → 2016-10-27 (-8d) |  |  | 0d → 4d | 49 → 44 |  |
| 60 | Elaborar modelo de datos | 2016-10-28 A → 2016-10-24 A (-4d) | 2016-10-28 A → 2016-10-24 A (-4d) |  |  |  |  |  |
| 61 | Diagramar clases | 2016-11-02 → 2016-10-25 (-8d) | 2016-11-02 → 2016-10-25 (-8d) |  |  | 0d → 4d |  |  |
| 62 | Elaborar casos de prueba | 2016-11-03 → 2016-10-26 (-8d) | 2016-11-04 → 2016-10-27 (-8d) |  |  | 0d → 4d |  |  |
| 63 | Construir capa de negocio | 2016-11-03 → 2016-10-26 (-8d) | 2016-11-04 → 2016-10-27 (-8d) |  |  | 0d → 4d |  |  |
| 64 | Entregar documentación WS Aseguradora | 2016-11-04 → 2016-10-27 (-8d) | 2016-11-04 → 2016-10-27 (-8d) |  |  | 0d → 4d |  |  |
| 66 | **Iteración 3: Construcción del sistema** | 2016-11-04 → 2016-10-30 (-5d) |  | 10d → 13d |  |  |  |  |
| 67 | **Script BD** | 2016-11-04 → 2016-10-30 (-5d) | 2016-11-08 → 2016-11-02 (-6d) | 2d → 1d |  | 8d → 12d |  |  |
| 68 | Construcción BD final | 2016-11-08 → 2016-11-02 (-6d) | 2016-11-08 → 2016-11-02 (-6d) |  |  | 8d → 12d | Implementación procedimiento almacenado → none |  |
| 69 | Entrega script BD CMH | 2016-11-04 → 2016-10-30 (-5d) | 2016-11-04 → 2016-10-30 (-5d) |  |  | 10d → 13d |  |  |
| 70 | **Aplicación Web** | 2016-11-04 → 2016-10-30 (-5d) | 2016-11-11 → 2016-11-08 (-3d) |  |  | 2d → 5d |  |  |
| 71 | Construcción vistas | 2016-11-07 → 2016-11-02 (-5d) | 2016-11-11 → 2016-11-08 (-3d) |  |  | 2d → 5d |  |  |
| 72 | Entrega módulo web | 2016-11-04 → 2016-10-30 (-5d) | 2016-11-04 → 2016-10-30 (-5d) |  |  | 7d → 10d |  |  |
| 73 | **Terminal** | 2016-11-04 → 2016-10-30 (-5d) | 2016-11-15 → 2016-11-10 (-5d) |  |  | 0d → 3d |  |  |
| 74 | Construcción vistas | 2016-11-07 → 2016-11-02 (-5d) | 2016-11-15 → 2016-11-10 (-5d) |  |  | 0d → 3d |  |  |
| 75 | Entrega módulo terminal | 2016-11-04 → 2016-10-30 (-5d) | 2016-11-04 → 2016-10-30 (-5d) |  |  | 7d → 10d |  |  |
| 76 | **Pruebas de calidad** | 2016-11-16 → 2016-11-11 (-5d) | 2016-11-18 → 2016-11-15 (-3d) |  |  | 0d → 3d |  |  |
| 77 | Pruebas de integración | 2016-11-16 → 2016-11-11 (-5d) | 2016-11-17 → 2016-11-14 (-3d) |  |  | 0d → 3d |  |  |
| 78 | Pruebas de aceptación | 2016-11-18 → 2016-11-15 (-3d) | 2016-11-18 → 2016-11-15 (-3d) |  |  | 0d → 3d |  |  |

## Version 7 (saved 2016-10-24)

Note of the change: Correcciones menores en tiempos

Last finish stays 2016-11-20. Complete tasks 35 → 33.

Added:

| ID | Task | Duration | Start | Finish | Predecessors |
| --- | --- | --- | --- | --- | --- |
| 43 | Diseñar procedimiento almacenado | 1d | 2016-10-18 | 2016-10-18 | 42 |
| 69 | Implementación procedimiento almacenado | 1d | 2016-11-07 | 2016-11-07 |  |

Changed:

| ID | Task | Start | Finish | Duration | Complete | Total float | Predecessors | Other |
| --- | --- | --- | --- | --- | --- | --- | --- | --- |
| 29 | **Iteración 2: Diseño e implementación del sistema** | 2016-09-25 A → 2016-09-26 A (+1d) | 2016-10-30 → 2016-11-04 (+5d) | 24d → 27d | 60% → 50% | 3d → 0d |  | was named Iteración 2: Diseño del sistema |
| 36 | **Documentación** |  | 2016-10-19 A → 2016-10-19 |  | 100% → 50% | none → 10d |  |  |
| 38 | Matriz de trazabilidad: Requerimientos vs clases | 2016-10-19 A → 2016-10-19 | 2016-10-19 A → 2016-10-19 |  | 100% → 0% | none → 10d |  |  |
| 39 | **Modelo de datos** | 2016-09-25 A → 2016-10-03 A (+8d) | 2016-10-17 → 2016-10-18 (+1d) | 15d → 11d | 99% → 84% | 0d → -1d |  |  |
| 42 | Poblar base de datos |  | 2016-10-17 A → 2016-10-17 |  | 100% → 75% | none → -1d |  |  |
| 44 | Entregar modelo de datos | 2016-09-25 → 2016-10-18 (+23d) | 2016-09-25 → 2016-10-18 (+23d) |  |  | 15d → -1d | none → 43 |  |
| 50 | **Terminal** |  |  |  | 38% → 17% | 4d → 0d |  |  |
| 52 | Elaborar casos prueba | 2016-10-21 A → 2016-10-21 |  |  | 25% → 0% | 4d → 0d |  |  |
| 53 | Construir capa de negocio | 2016-10-21 A → 2016-10-21 |  |  | 25% → 0% | 4d → 0d |  |  |
| 54 | Entregar documentación Website |  |  |  |  | 4d → 0d |  | was named Entregar documentación terminal |
| 60 | **WS Aseguradora** | 2016-10-24 A → 2016-10-28 A (+4d) | 2016-10-27 → 2016-11-04 (+8d) |  |  | 4d → 0d | 45 → 50 |  |
| 61 | Elaborar modelo de datos | 2016-10-24 A → 2016-10-28 A (+4d) | 2016-10-24 A → 2016-10-28 A (+4d) |  |  |  |  |  |
| 62 | Diagramar clases | 2016-10-25 → 2016-11-02 (+8d) | 2016-10-25 → 2016-11-02 (+8d) |  |  | 4d → 0d |  |  |
| 63 | Elaborar casos de prueba | 2016-10-26 → 2016-11-03 (+8d) | 2016-10-27 → 2016-11-04 (+8d) |  |  | 4d → 0d |  |  |
| 64 | Construir capa de negocio | 2016-10-26 → 2016-11-03 (+8d) | 2016-10-27 → 2016-11-04 (+8d) |  |  | 4d → 0d |  |  |
| 65 | Entregar documentación WS Aseguradora | 2016-10-27 → 2016-11-04 (+8d) | 2016-10-27 → 2016-11-04 (+8d) |  |  | 4d → 0d |  |  |
| 67 | **Iteración 3: Construcción del sistema** | 2016-10-30 → 2016-11-04 (+5d) |  | 13d → 10d |  |  |  |  |
| 68 | **Script BD** | 2016-10-30 → 2016-11-04 (+5d) | 2016-11-02 → 2016-11-08 (+6d) | 1d → 2d |  | 12d → 8d |  |  |
| 70 | Construcción BD final | 2016-11-02 → 2016-11-08 (+6d) | 2016-11-02 → 2016-11-08 (+6d) |  |  | 12d → 8d | none → 69 |  |
| 71 | Entrega script BD CMH | 2016-10-30 → 2016-11-04 (+5d) | 2016-10-30 → 2016-11-04 (+5d) |  |  | 13d → 10d |  |  |
| 72 | **Aplicación Web** | 2016-10-30 → 2016-11-04 (+5d) | 2016-11-08 → 2016-11-11 (+3d) |  |  | 5d → 2d |  |  |
| 73 | Construcción vistas | 2016-11-02 → 2016-11-07 (+5d) | 2016-11-08 → 2016-11-11 (+3d) |  |  | 5d → 2d |  |  |
| 74 | Entrega módulo web | 2016-10-30 → 2016-11-04 (+5d) | 2016-10-30 → 2016-11-04 (+5d) |  |  | 10d → 7d |  |  |
| 75 | **Terminal** | 2016-10-30 → 2016-11-04 (+5d) | 2016-11-10 → 2016-11-15 (+5d) |  |  | 3d → 0d |  |  |
| 76 | Construcción vistas | 2016-11-02 → 2016-11-07 (+5d) | 2016-11-10 → 2016-11-15 (+5d) |  |  | 3d → 0d |  |  |
| 77 | Entrega módulo terminal | 2016-10-30 → 2016-11-04 (+5d) | 2016-10-30 → 2016-11-04 (+5d) |  |  | 10d → 7d |  |  |
| 78 | **Pruebas de calidad** | 2016-11-11 → 2016-11-16 (+5d) | 2016-11-15 → 2016-11-18 (+3d) |  |  | 3d → 0d |  |  |
| 79 | Pruebas de integración | 2016-11-11 → 2016-11-16 (+5d) | 2016-11-14 → 2016-11-17 (+3d) |  |  | 3d → 0d |  |  |
| 80 | Pruebas de aceptación | 2016-11-15 → 2016-11-18 (+3d) | 2016-11-15 → 2016-11-18 (+3d) |  |  | 3d → 0d |  |  |

## Version 8 (saved 2016-11-04)

Note of the change: Merge remote-tracking branch 'refs/remotes/origin/dev' into fix-diccionario-de-datos

Last finish stays 2016-11-20. Complete tasks 33 → 51.

Added:

| ID | Task | Duration | Start | Finish | Predecessors |
| --- | --- | --- | --- | --- | --- |
| 74 | Pruebas de integración | 2d | 2016-11-15 | 2016-11-16 | 73 |
| 75 | Pruebas de aceptación | 2d | 2016-11-17 | 2016-11-18 | 74 |

Removed: 43 Diseñar procedimiento almacenado; 68 Script BD; 69 Implementación procedimiento almacenado; 70 Construcción BD final; 71 Entrega script BD CMH; 78 Pruebas de calidad

Changed:

| ID | Task | Start | Finish | Duration | Complete | Total float | Predecessors | Other |
| --- | --- | --- | --- | --- | --- | --- | --- | --- |
| 29 | **Iteración 2: Diseño, construcción y documentación del backend y tests unitarios** |  | 2016-11-04 → 2016-10-30 A (-5d) | 27d → 24d | 50% → 100% | 0d → none |  | was named Iteración 2: Diseño e implementación del sistema |
| 30 | **Arquitectura** |  | 2016-10-04 A |  | 99% → 100% | 20d → none |  |  |
| 35 | Entrega documento arquitectura | 2016-10-04 A | 2016-10-04 A |  | 0% → 100% | 20d → none |  |  |
| 36 | **Documentación** |  | 2016-10-19 A |  | 50% → 100% | 10d → none |  |  |
| 38 | Matriz de trazabilidad: Requerimientos vs clases | 2016-10-19 A | 2016-10-19 A |  | 0% → 100% | 10d → none |  |  |
| 39 | **Modelo de datos** |  | 2016-10-18 A |  | 84% → 100% | -1d → none |  |  |
| 42 | Poblar base de datos |  | 2016-10-17 A |  | 75% → 100% | -1d → none |  |  |
| 43 | Entregar modelo de datos | 2016-10-18 A | 2016-10-18 A |  | 0% → 100% | -1d → none | Diseñar procedimiento almacenado → none |  |
| 44 | **Aplicación Web** |  | 2016-10-21 A |  | 36% → 100% | 0d → none |  |  |
| 46 | Elaborar casos prueba |  | 2016-10-21 A |  | 25% → 100% | 0d → none |  |  |
| 47 | Construir capa de negocio |  | 2016-10-21 A |  | 25% → 100% | 0d → none |  |  |
| 48 | Entregar documentación aplicación web | 2016-10-21 A | 2016-10-21 A |  | 0% → 100% | 0d → none |  |  |
| 49 | **Terminal** |  | 2016-10-27 A |  | 17% → 100% | 0d → none |  |  |
| 51 | Elaborar casos prueba | 2016-10-21 A | 2016-10-27 A |  | 0% → 100% | 0d → none |  | resources Fabián Jaque [50%] → Fabián Jaque; Gonzalo López; Elías Baeza |
| 52 | Construir capa de negocio | 2016-10-21 A | 2016-10-27 A |  | 0% → 100% | 0d → none |  | resources Fabián Jaque [50%] → Fabián Jaque; Gonzalo López; Elías Baeza |
| 53 | Entregar documentación Website | 2016-10-27 A | 2016-10-27 A |  | 0% → 100% | 0d → none |  |  |
| 54 | **Servicio de pago** |  | 2016-10-26 A |  | 20% → 100% | 5d → none |  |  |
| 56 | Elaborar plan de pruebas | 2016-10-25 A | 2016-10-26 A |  | 0% → 100% | 5d → none |  | resources none → Pablo de la Sotta [50%] |
| 57 | Construir capa de negocio | 2016-10-25 A | 2016-10-26 A |  | 0% → 100% | 5d → none |  | resources none → Pablo de la Sotta [50%] |
| 58 | Entregar sistema de pagos | 2016-10-26 A | 2016-10-26 A |  | 0% → 100% | 5d → none |  |  |
| 59 | **WS Aseguradora** | 2016-10-28 A → 2016-10-24 A (-4d) | 2016-11-04 → 2016-10-27 A (-8d) |  | 17% → 100% | 0d → none | 49 → 44 |  |
| 60 | Elaborar modelo de datos | 2016-10-28 A → 2016-10-24 A (-4d) | 2016-10-28 A → 2016-10-24 A (-4d) |  |  |  |  |  |
| 61 | Diagramar clases | 2016-11-02 → 2016-10-25 A (-8d) | 2016-11-02 → 2016-10-25 A (-8d) |  | 0% → 100% | 0d → none |  |  |
| 62 | Elaborar casos de prueba | 2016-11-03 → 2016-10-26 A (-8d) | 2016-11-04 → 2016-10-27 A (-8d) |  | 0% → 100% | 0d → none |  | resources none → Pablo de la Sotta [50%] |
| 63 | Construir capa de negocio | 2016-11-03 → 2016-10-26 A (-8d) | 2016-11-04 → 2016-10-27 A (-8d) |  | 0% → 100% | 0d → none |  | resources none → Pablo de la Sotta [50%] |
| 64 | Entregar documentación WS Aseguradora | 2016-11-04 → 2016-10-27 A (-8d) | 2016-11-04 → 2016-10-27 A (-8d) |  | 0% → 100% | 0d → none |  |  |
| 65 | Entregar diseño del sistema | 2016-10-30 A | 2016-10-30 A |  | 0% → 100% | 3d → none |  |  |
| 66 | **Iteración 3: Construcción de vistas** | 2016-11-04 → 2016-11-02 (-2d) |  | 10d → 13d |  |  |  | was named Iteración 3: Construcción del sistema |
| 67 | **Aplicación Web** | 2016-11-04 → 2016-11-02 (-2d) |  | 5d → 8d |  | 2d → 5d |  |  |
| 68 | Construcción vistas | 2016-11-07 → 2016-11-02 (-5d) | 2016-11-11 → 2016-11-08 (-3d) |  |  | 2d → 5d |  |  |
| 69 | Pruebas de integración | 2016-11-16 → 2016-11-09 (-7d) | 2016-11-17 → 2016-11-10 (-7d) |  |  | 0d → 5d | 72 → 68 |  |
| 70 | Pruebas de aceptación | 2016-11-18 → 2016-11-11 (-7d) | 2016-11-18 → 2016-11-11 (-7d) |  |  | 0d → 5d |  |  |
| 71 | Entrega módulo web | 2016-11-04 → 2016-11-11 (+7d) | 2016-11-04 → 2016-11-11 (+7d) |  |  | 7d → 5d | none → 70 |  |
| 72 | **Terminal** | 2016-11-04 → 2016-11-02 (-2d) | 2016-11-15 → 2016-11-18 (+3d) | 7d → 13d |  |  |  |  |
| 73 | Construcción vistas | 2016-11-07 → 2016-11-02 (-5d) | 2016-11-15 → 2016-11-14 (-1d) | 7d → 9d |  |  |  |  |
| 76 | Entrega módulo terminal | 2016-11-04 → 2016-11-18 (+14d) | 2016-11-04 → 2016-11-18 (+14d) |  |  | 7d → 0d | none → 75 |  |
| 77 | Entrega del sistema |  |  |  |  |  | none → 67, 72 |  |
